# GANTT CREMATORIO 16.09.25

Schedule from MS Project XML, 2025-10-24 to 2026-02-20, costs in S.

## Calendars

- crematorio: Mon-Sun 08:00-12:00, 13:00-17:00.

## Schedule

| ID | WBS | Task | Type | Duration | Start | Finish | Predecessors | Total slack | Free slack | Cost | Text2 | Text1 |
| --- | --- | --- | --- | --- | --- | --- | --- | --- | --- | --- | --- | --- |
| 1 | 1 | **PRESUPUESTO OFERTA 95%- CONSTRUCCION DE NICHO, COLUMBARIO Y CREMATORIO; REMODELACION DE VELATORIO; EN EL(LA) CEMENTERIO MUNICIPAL** |  | 119d | 2025-10-24 | 2026-02-20 |  | 0d |  | 1,253,165.9 | 120 días |  |
| 2 | 1.1 | Inicio de Obra | milestone | 0d | 2025-10-24 | 2025-10-24 |  | 0d |  |  | 0 días |  |
| 3 | 1.2 | **OBRAS PROVISIONALES , PRELIMINARES Y SEGURIDAD Y SALUD** |  | 119d | 2025-10-24 | 2026-02-20 |  | 0d |  | 77,708.1 | 120 días |  |
| 4 | 1.2.1 | **OBRAS PROVISIONALES, TRABAJOS PRELIMINARES , SEGURIDAD Y SALUD** |  | 119d | 2025-10-24 | 2026-02-20 |  | 0d |  | 77,708.1 | 120 días | 01 |
| 5 | 1.2.1.1 | **OBRAS PROVISIONALES** |  | 119d | 2025-10-24 | 2026-02-20 |  | 0d |  | 16,918.48 | 120 días | 01.01 |
| 6 | 1.2.1.1.1 | **CONSTRUCCIONES PROVISIONALES** |  | 6d | 2025-10-24 | 2025-10-30 |  | 0d |  | 11,209.46 | 7 días | 01.01.01 |
| 7 | 1.2.1.1.1.1 | CARTEL DE IDENTIFICACION DE LA OBRA DE 3.60X2.40M |  | 1d | 2025-10-24 | 2025-10-25 | 2 | 118d |  | 2,350.85 | 2 días | 01.01.01.01 |
| 8 | 1.2.1.1.1.2 | CERCO PERIMETRICO PROVISIONAL DE MALLA RASHELL H=2.10M |  | 3d | 2025-10-24 | 2025-10-27 | 2 | 114d | 0d | 1,350.98 | 4 días | 01.01.01.02 |
| 9 | 1.2.1.1.1.3 | CERCO PERIMETRICO PROVISIONAL DE METALICO H=2.10M |  | 2d | 2025-10-27 | 2025-10-29 | 8 | 114d |  | 2,079.97 | 3 días | 01.01.01.03 |
| 10 | 1.2.1.1.1.4 | ALMACEN, OFICINA Y CASETA DE GUARDIANIA DE TRIPLAY |  | 3d | 2025-10-24 | 2025-10-27 | 2 | 0d |  | 2,311.66 | 4 días | 01.01.01.04 |
| 11 | 1.2.1.1.1.5 | TRANSPORTES DE MAQUINARIAS, EQUIPOS Y HERRAMIENTAS A OBRA |  | 3d | 2025-10-27 | 2025-10-30 | 10 | 113d |  | 2,280 | 4 días | 01.01.01.05 |
| 12 | 1.2.1.1.1.6 | TRANSPORTE DE MATERIALES |  | 3d | 2025-10-27 | 2025-10-30 | 10 | 113d |  | 836 | 4 días | 01.01.01.06 |
| 13 | 1.2.1.1.2 | **INSTALACIONES PROVISIONALES** |  | 116d | 2025-10-27 | 2026-02-20 |  | 0d |  | 5,709.02 | 117 días | 01.01.02 |
| 14 | 1.2.1.1.2.1 | ALQUILER DE BAÑOS QUIMICOS PORTATILES |  | 116d | 2025-10-27 | 2026-02-20 | 10 | 0d |  | 2,280 | 117 días | 01.01.02.01 |
| 15 | 1.2.1.1.2.2 | SUMINISTRO E INSTALACION PARA PUNTO DE AGUA EN OBRA |  | 3d | 2025-10-27 | 2025-10-30 | 14SS | 113d |  | 446.02 | 4 días | 01.01.02.02 |
| 16 | 1.2.1.1.2.3 | SUMINISTRO E INSTALACION PARA PUNTO DE ENERGIA EN OBRA |  | 3d | 2025-10-27 | 2025-10-30 | 14SS | 113d |  | 380 | 4 días | 01.01.02.03 |
| 17 | 1.2.1.1.2.4 | AGUA PROVISIONAL EN OBRA |  | 116d | 2025-10-27 | 2026-02-20 | 14SS | 0d |  | 1,140 | 117 días | 01.01.02.04 |
| 18 | 1.2.1.1.2.5 | ENERGIA ELECTRICA PROVISIONAL |  | 116d | 2025-10-27 | 2026-02-20 | 14SS | 0d |  | 1,463 | 117 días | 01.01.02.05 |
| 19 | 1.2.1.2 | **TRABAJOS PRELIMINARES** |  | 13d | 2025-10-27 | 2025-11-09 |  | 0d |  | 4,767.26 | 14 días | 01.02 |
| 20 | 1.2.1.2.1 | **CREMATORIO** |  | 2d | 2025-10-27 | 2025-10-29 |  | 0d |  | 1,719.98 | 3 días | 01.02.01 |
| 21 | 1.2.1.2.1.1 | DESBROCE Y LIMPIEZA MANUAL DEL TERRENO |  | 1d | 2025-10-27 | 2025-10-28 | 14SS | 0d |  | 836.19 | 2 días | 01.02.01.01 |
| 22 | 1.2.1.2.1.2 | ELIMINACION DE MALEZA Y ARBUSTO DE FACIL EXTRACCION |  | 1d | 2025-10-28 | 2025-10-29 | 21 | 0d |  | 883.79 | 2 días | 01.02.01.02 |
| 23 | 1.2.1.2.2 | **VELATORIO** |  | 13d | 2025-10-27 | 2025-11-09 |  | 37d |  | 2,081.76 | 14 días | 01.02.02 |
| 24 | 1.2.1.2.2.1 | DEMOLICION DE MUROS EXISTENTES |  | 3d | 2025-11-05 | 2025-11-08 | 29 | 103d | 0d | 672.83 | 4 días | 01.02.02.01 |
| 25 | 1.2.1.2.2.2 | DESMONTAJE DE APARATOS SANITARIOS EXISTENTES EN LA OFICINA ADMINISTRACION |  | 1d | 2025-10-27 | 2025-10-28 | 26SS | 115d |  | 31.49 | 2 días | 01.02.02.02 |
| 26 | 1.2.1.2.2.3 | RETIRO DE CERAMICO EXISTENTE EN LA OFICINA |  | 3d | 2025-10-27 | 2025-10-30 | 14SS | 37d | 0d | 825.76 | 4 días | 01.02.02.03 |
| 27 | 1.2.1.2.2.4 | RETIRO DE PISO EXISTENTE EN NUEVA ZONA DE KITCHENETTE Y CANALETAS |  | 4d | 2025-10-30 | 2025-11-03 | 26 | 37d | 0d | 92.56 | 5 días | 01.02.02.04 |
| 28 | 1.2.1.2.2.5 | DESMONTAJE DE SISTEMAS ELECTRICOS , INCL.SELLADO DE SALIDAS SEGUN PLANO |  | 1d | 2025-11-03 | 2025-11-04 | 27 | 37d | 0d | 31.49 | 2 días | 01.02.02.05 |
| 29 | 1.2.1.2.2.6 | DESMONTAJE DE SISTEMAS DE COMUNICACIONES Y REDES |  | 2d | 2025-11-03 | 2025-11-05 | 28SS | 37d | 0d | 31.49 | 3 días | 01.02.02.06 |
| 30 | 1.2.1.2.2.7 | ELIMINACION MATERIAL EXCEDENTE C/VOLQ. 15 m3 D=10 km |  | 1d | 2025-11-08 | 2025-11-09 | 24 | 103d |  | 396.14 | 2 días | 01.02.02.07 |

| ID | WBS | Task | Duration | Start | Finish | Predecessors | Total slack | Free slack | Cost | Text1 | Text2 |
| --- | --- | --- | --- | --- | --- | --- | --- | --- | --- | --- | --- |
| 31 | 1.2.1.2.3 | **COLUMBARIO** | 2d | 2025-10-27 | 2025-10-29 |  | 114d |  | 965.52 | 01.02.03 | 3 días |
| 32 | 1.2.1.2.3.1 | DESBROCE Y LIMPIEZA MANUAL DEL TERRENO | 2d | 2025-10-27 | 2025-10-29 | 14SS | 114d |  | 965.52 | 01.02.03.01 | 3 días |
| 33 | 1.2.1.3 | **SEGURIDAD Y SALUD EN EL TRABAJO** | 118d | 2025-10-24 | 2026-02-19 |  | 1d |  | 22,523.25 | 01.03 | 119 días |
| 34 | 1.2.1.3.1 | ELABORACION , IMPLEMENTACION Y ADMINISTRACION DEL PLAN DE SEGURIDAD Y SALUD EN EL TRABAJO | 118d | 2025-10-24 | 2026-02-19 | 2 | 1d |  | 120.76 | 01.03.01 | 119 días |
| 35 | 1.2.1.3.2 | EQUIPOS DE PROTECCION INDIVIDUAL | 118d | 2025-10-24 | 2026-02-19 | 2 | 1d |  | 10,384.45 | 01.03.02 | 119 días |
| 36 | 1.2.1.3.3 | EQUIPOS DE PROTECCION COLECTIVA | 118d | 2025-10-24 | 2026-02-19 | 2 | 1d |  | 2,375 | 01.03.03 | 119 días |
| 37 | 1.2.1.3.4 | SEÑALIZACION TEMPORAL DE SEGURIDAD | 118d | 2025-10-24 | 2026-02-19 | 2 | 1d |  | 3,349.7 | 01.03.04 | 119 días |
| 38 | 1.2.1.3.5 | CAPACITACION EN SEGURIDAD Y SALUD | 118d | 2025-10-24 | 2026-02-19 | 2 | 1d |  | 3,800 | 01.03.05 | 119 días |
| 39 | 1.2.1.3.6 | RECURSOS PARA RESPUESTA ANTE EMERGENCIAS | 118d | 2025-10-24 | 2026-02-19 | 2 | 1d |  | 2,493.34 | 01.03.06 | 119 días |
| 40 | 1.2.1.4 | **PLAN DE MANEJO AMBIENTAL** | 118d | 2025-10-24 | 2026-02-19 |  | 1d |  | 32,065.02 | 01.04 | 119 días |
| 41 | 1.2.1.4.1 | PROGRAMA DE PREVENCION Y MITIGACION AMBIENTAL | 118d | 2025-10-24 | 2026-02-19 | 2 | 1d |  | 8,050.85 | 01.04.01 | 119 días |
| 42 | 1.2.1.4.2 | PLAN DE MANEJO DE RESIDUOS SOLIDOS | 105d | 2025-11-06 | 2026-02-19 | 2FS+13d | 1d |  | 8,050.85 | 01.04.02 | 106 días |
| 43 | 1.2.1.4.3 | PROGRAMA DE MONITOREO AMBIENTAL | 86d | 2025-11-06 | 2026-01-31 | 2FS+13d | 20d |  | 4,025.43 | 01.04.03 | 87 días |
| 44 | 1.2.1.4.4 | PROGRAMA DE USO DE AGUA | 105d | 2025-11-06 | 2026-02-19 | 2FS+13d | 1d |  | 4,023.37 | 01.04.04 | 106 días |
| 45 | 1.2.1.4.5 | PROGRAMA DE EDUCACION , FORMACION Y CAPACITACION DE PERSONAL | 105d | 2025-11-06 | 2026-02-19 | 2FS+13d | 1d |  | 1,127.64 | 01.04.05 | 106 días |
| 46 | 1.2.1.4.6 | PROGRAMA DE SEGURIDAD Y SALUD OCUPACIONAL | 105d | 2025-11-06 | 2026-02-19 | 2FS+13d | 1d |  | 1,610.17 | 01.04.06 | 106 días |
| 47 | 1.2.1.4.7 | PLAN DE CONTINGENCIAS | 105d | 2025-11-06 | 2026-02-19 | 2FS+13d | 1d |  | 805.09 | 01.04.07 | 106 días |
| 48 | 1.2.1.4.8 | PROGRAMA DE CONTROL DE VIGILANCIA SANITARIA PARA PLAGAS Y VECTORES | 105d | 2025-11-06 | 2026-02-19 | 2FS+13d | 1d |  | 346.19 | 01.04.08 | 106 días |
| 49 | 1.2.1.4.9 | PROGRAMA DE CIERRE | 105d | 2025-11-06 | 2026-02-19 | 2FS+13d | 1d |  | 4,025.43 | 01.04.09 | 106 días |
| 50 | 1.2.1.5 | **TRAZO Y REPLANTEO** | 1d | 2025-10-27 | 2025-10-28 |  | 0d |  | 1,434.09 | 01.05 | 2 días |
| 51 | 1.2.1.5.1 | TRAZO, NIVELES Y REPLANTEO INICIAL | 1d | 2025-10-27 | 2025-10-28 | 14SS | 0d |  | 733.25 | 01.05.01 | 2 días |
| 52 | 1.2.1.5.2 | TRAZO, NIVELES Y REPLANTEO DURANTE EL PROCESO | 1d | 2025-10-27 | 2025-10-28 | 51SS | 115d |  | 700.84 | 01.05.02 | 2 días |
| 53 | 1.3 | **ESTRUCTURAS** | 115d | 2025-10-28 | 2026-02-20 |  | 0d |  | 753,983.13 |  | 116 días |
| 54 | 1.3.1 | **ESTRUCTURAS** | 115d | 2025-10-28 | 2026-02-20 |  | 0d |  | 753,983.13 | 02 | 116 días |
| 55 | 1.3.1.1 | **CREMATORIO** | 68d | 2025-10-29 | 2026-01-05 |  | 0d |  | 187,644.34 | 02.01 | 69 días |
| 56 | 1.3.1.1.1 | **MOVIMIENTO DE TIERRAS** | 42d | 2025-10-29 | 2025-12-10 |  | 0d |  | 18,164.22 | 02.01.01 | 43 días |
| 57 | 1.3.1.1.1.1 | CORTE DE TERRENO PARA ADOQUINADO | 1d | 2025-10-29 | 2025-10-30 | 61SS | 0d |  | 215.84 | 02.01.01.01 | 2 días |
| 58 | 1.3.1.1.1.2 | REFINE , NIVELACION Y COMPACTACION DE TERRENO NATURAL | 1d | 2025-12-09 | 2025-12-10 | 68 | 72d |  | 180.99 | 02.01.01.02 | 2 días |
| 59 | 1.3.1.1.1.3 | ACARREO INTERNO DE MATERIAL PROCEDENTE DEL CORTE (ADOQUINADO + CREMATORIO) | 1d | 2025-11-08 | 2025-11-09 | 62 | 103d | 0d | 1,273.79 | 02.01.01.03 | 2 días |
| 60 | 1.3.1.1.1.4 | ELIMINACION DE MATERIAL EXCEDENTE (ADOQUINADO + CREMATORIO) | 1d | 2025-11-08 | 2025-11-09 | 59SS | 103d |  | 4,606.04 | 02.01.01.04 | 2 días |
| 61 | 1.3.1.1.1.5 | CORTE DE TERRENO PARA CREMATORIO | 1d | 2025-10-29 | 2025-10-30 | 22 | 0d |  | 627.19 | 02.01.01.05 | 2 días |
| 62 | 1.3.1.1.1.6 | REFINE , NIVELACION Y COMPACTACION DE TERRENO NATURAL | 2d | 2025-11-06 | 2025-11-08 | 63 | 103d | 0d | 876.06 | 02.01.01.06 | 3 días |
| 63 | 1.3.1.1.1.7 | EXCAVACION MANUAL EN TERRENO NORMAL | 7d | 2025-10-30 | 2025-11-06 | 61, 57 | 0d |  | 2,478.99 | 02.01.01.07 | 8 días |
| 64 | 1.3.1.1.1.8 | RELLENO CON MATERIAL DE PRESTAMO (AFIRMADO) | 5d | 2025-11-27 | 2025-12-02 | 67 | 78d | 0d | 7,905.32 | 02.01.01.08 | 6 días |

| ID | WBS | Task | Duration | Start | Finish | Predecessors | Total slack | Free slack | Cost | Text1 | Text2 |
| --- | --- | --- | --- | --- | --- | --- | --- | --- | --- | --- | --- |
| 65 | 1.3.1.1.2 | **OBRAS DE CONCRETO SIMPLE** | 33d | 2025-11-06 | 2025-12-09 |  | 0d |  | 23,281.7 | 02.01.02 | 34 días |
| 66 | 1.3.1.1.2.1 | SOLADO e=4"(ZAPATAS) | 1d | 2025-11-06 | 2025-11-07 | 63 | 0d |  | 919.34 | 02.01.02.01 | 2 días |
| 67 | 1.3.1.1.2.2 | CIMIENTOS CORRIDOS f'c=175 kg/cm2 + 30 % P.M | 1d | 2025-11-26 | 2025-11-27 | 77SS | 0d |  | 5,288.28 | 02.01.02.02 | 2 días |
| 68 | 1.3.1.1.2.3 | SOBRECIMIENTO, CONCRETO 175 kg/cm2+30% P.M | 3d | 2025-12-06 | 2025-12-09 | 69FS-3d | 0d |  | 3,445.6 | 02.01.02.03 | 4 días |
| 69 | 1.3.1.1.2.4 | ENCOFRADO Y DESENCOFRADO DE SOBRECIMIENTOS | 8d | 2025-12-01 | 2025-12-09 | 85 | 0d |  | 8,944.31 | 02.01.02.04 | 9 días |
| 70 | 1.3.1.1.2.5 | CONCRETO FALSO PISO MEZCLA 1:8 CEMENTO - HORMIGON e=4" | 1d | 2025-12-02 | 2025-12-03 | 64 | 78d | 0d | 4,684.17 | 02.01.02.05 | 2 días |
| 71 | 1.3.1.1.3 | **OBRAS DE CONCRETO ARMADO** | 59d | 2025-11-07 | 2026-01-05 |  | 0d |  | 145,644.02 | 02.01.03 | 60 días |
| 72 | 1.3.1.1.3.1 | **ZAPATAS AISLADAS** | 9d | 2025-11-07 | 2025-11-16 |  | 0d |  | 18,790.43 | 02.01.03.01 | 10 días |
| 73 | 1.3.1.1.3.1.1 | CONCRETO F´C 210 KG/CM2 ZAPATAS | 3d | 2025-11-12 | 2025-11-15 | 74 | 96d | 0d | 6,727.85 | 02.01.03.01.01 | 4 días |
| 74 | 1.3.1.1.3.1.2 | ACERO DE REFUERZO Fy=4200 kg/cm2 | 5d | 2025-11-07 | 2025-11-12 | 66 | 0d |  | 11,959.91 | 02.01.03.01.02 | 6 días |
| 75 | 1.3.1.1.3.1.3 | CURADO DE CONCRETO | 1d | 2025-11-15 | 2025-11-16 | 73 | 96d |  | 102.67 | 02.01.03.01.03 | 2 días |
| 76 | 1.3.1.1.3.2 | **COLUMNAS** | 22d | 2025-11-07 | 2025-11-29 |  | 0d |  | 32,651.49 | 02.01.03.02 | 23 días |
| 77 | 1.3.1.1.3.2.1 | CONCRETO F´C 210 KG/CM2 COLUMNAS | 3d | 2025-11-26 | 2025-11-29 | 78 | 0d |  | 6,393.86 | 02.01.03.02.01 | 4 días |
| 78 | 1.3.1.1.3.2.2 | ENCOFRADO Y DESENCOFRADO DE COLUMNAS | 13d | 2025-11-13 | 2025-11-26 | 79 | 0d |  | 11,205.82 | 02.01.03.02.02 | 14 días |
| 79 | 1.3.1.1.3.2.3 | ACERO DE REFUERZO Fy=4200 kg/cm2 | 6d | 2025-11-07 | 2025-11-13 | 74SS | 0d |  | 14,753.06 | 02.01.03.02.03 | 7 días |
| 80 | 1.3.1.1.3.2.4 | CURADO DE CONCRETO | 2d | 2025-11-13 | 2025-11-15 | 79 | 97d |  | 298.75 | 02.01.03.02.04 | 3 días |
| 81 | 1.3.1.1.3.3 | **COLUMNETAS** | 5d | 2025-11-26 | 2025-12-01 |  | 0d |  | 2,622.48 | 02.01.03.03 | 6 días |
| 82 | 1.3.1.1.3.3.1 | CONCRETO F´C 210 KG/CM2 COLUMNETAS | 1d | 2025-11-29 | 2025-11-30 | 83 | 0d |  | 401.91 | 02.01.03.03.01 | 2 días |
| 83 | 1.3.1.1.3.3.2 | ENCOFRADO Y DESENCOFRADO DE COLUMNETAS | 2d | 2025-11-27 | 2025-11-29 | 84 | 0d |  | 1,365.04 | 02.01.03.03.02 | 3 días |
| 84 | 1.3.1.1.3.3.3 | ACERO DE REFUERZO Fy=4200 kg/cm2 | 1d | 2025-11-26 | 2025-11-27 | 67SS | 0d |  | 807.65 | 02.01.03.03.03 | 2 días |
| 85 | 1.3.1.1.3.3.4 | CURADO DE CONCRETO | 1d | 2025-11-30 | 2025-12-01 | 82 | 0d |  | 47.88 | 02.01.03.03.04 | 2 días |
| 86 | 1.3.1.1.3.4 | **VIGAS ESTRUCTURALES** | 21d | 2025-11-29 | 2025-12-20 |  | 21d |  | 17,028.9 | 02.01.03.04 | 22 días |
| 87 | 1.3.1.1.3.4.1 | CONCRETO F´C 210 KG/CM2 - VIGAS ESTRUCTURALES | 1d | 2025-12-18 | 2025-12-19 | 97SS | 62d | 0d | 3,614.66 | 02.01.03.04.01 | 2 días |
| 88 | 1.3.1.1.3.4.2 | ENCOFRADO Y DESENCOFRADO DE VIGAS ESTRUCTURALES | 5d | 2025-12-03 | 2025-12-08 | 89 | 21d | 0d | 4,284.05 | 02.01.03.04.02 | 6 días |
| 89 | 1.3.1.1.3.4.3 | ACERO DE REFUERZO Fy=4200 kg/cm2 | 4d | 2025-11-29 | 2025-12-03 | 77 | 21d | 0d | 9,024.98 | 02.01.03.04.03 | 5 días |
| 90 | 1.3.1.1.3.4.4 | CURADO DE CONCRETO | 1d | 2025-12-19 | 2025-12-20 | 87 | 62d |  | 105.21 | 02.01.03.04.04 | 2 días |

| ID | WBS | Task | Duration | Start | Finish | Predecessors | Total slack | Free slack | Cost | Text1 | Text2 |
| --- | --- | --- | --- | --- | --- | --- | --- | --- | --- | --- | --- |
| 91 | 1.3.1.1.3.5 | **VIGAS DE CONFINAMIENTO** | 9d | 2025-11-27 | 2025-12-06 |  | 76d |  | 9,759.33 | 02.01.03.05 | 10 días |
| 92 | 1.3.1.1.3.5.1 | CONCRETO F´C 210 KG/CM2 - VIGUETAS | 1d | 2025-12-04 | 2025-12-05 | 93 | 76d | 0d | 1,878.46 | 02.01.03.05.01 | 2 días |
| 93 | 1.3.1.1.3.5.2 | ENCOFRADO Y DESENCOFRADO DE VIGUETAS | 6d | 2025-11-28 | 2025-12-04 | 94 | 76d | 0d | 5,550.5 | 02.01.03.05.02 | 7 días |
| 94 | 1.3.1.1.3.5.3 | ACERO DE REFUERZO Fy=4200 kg/cm2 | 1d | 2025-11-27 | 2025-11-28 | 84 | 76d | 0d | 2,197.73 | 02.01.03.05.03 | 2 días |
| 95 | 1.3.1.1.3.5.4 | CURADO DE CONCRETO | 1d | 2025-12-05 | 2025-12-06 | 92 | 76d |  | 132.64 | 02.01.03.05.04 | 2 días |
| 96 | 1.3.1.1.3.6 | **LOSA ALIGERADA** | 12d | 2025-12-08 | 2025-12-20 |  | 21d |  | 14,341.89 | 02.01.03.06 | 13 días |
| 97 | 1.3.1.1.3.6.1 | CONCRETO F´C 210 KG/CM2 - LOSA ALIGERADA | 1d | 2025-12-18 | 2025-12-19 | 99 | 21d | 0d | 1,999.18 | 02.01.03.06.01 | 2 días |
| 98 | 1.3.1.1.3.6.2 | ENCOFRADO Y DESENCOFRADO DE LOSA ALIGERADA | 6d | 2025-12-08 | 2025-12-14 | 88 | 21d | 0d | 6,880.44 | 02.01.03.06.02 | 7 días |
| 99 | 1.3.1.1.3.6.3 | ACERO DE REFUERZO Fy=4200 kg/cm2 | 3d | 2025-12-15 | 2025-12-18 | 100 | 21d | 0d | 2,672.8 | 02.01.03.06.03 | 4 días |
| 100 | 1.3.1.1.3.6.4 | LADRILLO DE TECHO | 1d | 2025-12-14 | 2025-12-15 | 98 | 21d | 0d | 2,589.84 | 02.01.03.06.04 | 2 días |
| 101 | 1.3.1.1.3.6.5 | CURADO DE CONCRETO | 1d | 2025-12-19 | 2025-12-20 | 97 | 21d | 0d | 199.63 | 02.01.03.06.05 | 2 días |
| 102 | 1.3.1.1.3.7 | **LOSA MACIZA** | 10d | 2025-12-10 | 2025-12-20 |  | 62d |  | 5,003.5 | 02.01.03.07 | 11 días |
| 103 | 1.3.1.1.3.7.1 | CONCRETO F´C 210 KG/CM2 - LOSA MACIZA | 1d | 2025-12-18 | 2025-12-19 | 97SS | 62d | 0d | 1,422.33 | 02.01.03.07.01 | 2 días |
| 104 | 1.3.1.1.3.7.2 | ENCOFRADO Y DESENCOFRADO DE LOSA MACIZA | 2d | 2025-12-10 | 2025-12-12 | 98SS+2d | 70d |  | 1,080.49 | 02.01.03.07.02 | 3 días |
| 105 | 1.3.1.1.3.7.3 | ACERO DE REFUERZO Fy=4200 kg/cm2 | 1d | 2025-12-16 | 2025-12-17 | 99SS+1d | 65d |  | 2,466.51 | 02.01.03.07.03 | 2 días |
| 106 | 1.3.1.1.3.7.4 | CURADO DE CONCRETO | 1d | 2025-12-19 | 2025-12-20 | 103 | 62d |  | 34.17 | 02.01.03.07.04 | 2 días |
| 107 | 1.3.1.1.3.8 | **CISTERNA** | 18d | 2025-12-18 | 2026-01-05 |  | 23d |  | 38,476.15 | 02.01.03.08 | 19 días |
| 108 | 1.3.1.1.3.8.1 | CONCRETO F´C 210 KG/CM2 - CISTERNA | 2d | 2026-01-01 | 2026-01-03 | 109 | 21d | 0d | 9,776.4 | 02.01.03.08.01 | 3 días |
| 109 | 1.3.1.1.3.8.2 | ENCOFRADO Y DESENCOFRADO DE CISTERNA | 12d | 2025-12-20 | 2026-01-01 | 101 | 21d | 0d | 13,152.15 | 02.01.03.08.02 | 13 días |
| 110 | 1.3.1.1.3.8.3 | ACERO DE REFUERZO Fy=4200 kg/cm2 | 7d | 2025-12-18 | 2025-12-25 | 99 | 44d | 0d | 15,225.54 | 02.01.03.08.03 | 8 días |
| 111 | 1.3.1.1.3.8.4 | CURADO DE CONCRETO | 2d | 2026-01-03 | 2026-01-05 | 108 | 46d |  | 322.06 | 02.01.03.08.04 | 3 días |
| 112 | 1.3.1.1.3.9 | **TRAMPA DE GRASA** | 11d | 2025-12-25 | 2026-01-05 |  | 44d |  | 6,969.85 | 02.01.03.09 | 12 días |
| 113 | 1.3.1.1.3.9.1 | CONCRETO F´C 210 KG/CM2 - TRAMPA DE GRASA | 1d | 2026-01-03 | 2026-01-04 | 114 | 44d | 0d | 1,776.49 | 02.01.03.09.01 | 2 días |
| 114 | 1.3.1.1.3.9.2 | ENCOFRADO Y DESENCOFRADO DE TRAMPA DE GRASA | 5d | 2025-12-29 | 2026-01-03 | 115 | 44d | 0d | 3,095.08 | 02.01.03.09.02 | 6 días |
| 115 | 1.3.1.1.3.9.3 | ACERO DE REFUERZO Fy=4200 kg/cm2 | 4d | 2025-12-25 | 2025-12-29 | 110 | 44d | 0d | 2,022.49 | 02.01.03.09.03 | 5 días |
| 116 | 1.3.1.1.3.9.4 | CURADO DE CONCRETO | 1d | 2026-01-04 | 2026-01-05 | 113 | 44d | 0d | 75.79 | 02.01.03.09.04 | 2 días |

| ID | WBS | Task | Duration | Start | Finish | Predecessors | Total slack | Free slack | Cost | Text1 | Text2 |
| --- | --- | --- | --- | --- | --- | --- | --- | --- | --- | --- | --- |
| 117 | 1.3.1.1.4 | **VARIOS** | 2d | 2025-12-18 | 2025-12-20 |  | 62d |  | 554.4 | 02.01.04 | 3 días |
| 118 | 1.3.1.1.4.1 | JUNTA DE DILATACION CON TECKNOPORT DE 1" e=2.5cm CON MATERIAL SELLANTE | 2d | 2025-12-18 | 2025-12-20 | 99 | 62d |  | 554.4 | 02.01.04.01 | 3 días |
| 119 | 1.3.1.2 | **VELATORIO** | 50d | 2025-11-05 | 2025-12-25 |  | 37d |  | 27,071.17 | 02.02 | 51 días |
| 120 | 1.3.1.2.1 | **NIVELACION DE TERRENO** | 2d | 2025-11-14 | 2025-11-16 |  | 37d |  | 28.76 | 02.02.01 | 3 días |
| 121 | 1.3.1.2.1.1 | NIVELACION MANUAL DEL TERRENO | 2d | 2025-11-14 | 2025-11-16 | 130 | 37d | 0d | 28.76 | 02.02.01.01 | 3 días |
| 122 | 1.3.1.2.2 | **EXCAVACIONES SIMPLES** | 3d | 2025-11-05 | 2025-11-08 |  | 37d |  | 150.13 | 02.02.02 | 4 días |
| 123 | 1.3.1.2.2.1 | EXCAVACION DE CIMENTACION | 3d | 2025-11-05 | 2025-11-08 | 29 | 37d | 0d | 150.13 | 02.02.02.01 | 4 días |
| 124 | 1.3.1.2.3 | **ELIMINACION DE MATERIAL EXCEDENTE** | 2d | 2025-11-16 | 2025-11-18 |  | 94d |  | 23.19 | 02.02.03 | 3 días |
| 125 | 1.3.1.2.3.1 | ELIMINACION MATERIAL EXCEDENTE | 2d | 2025-11-16 | 2025-11-18 | 121 | 94d |  | 23.19 | 02.02.03.01 | 3 días |
| 126 | 1.3.1.2.4 | **OBRAS DE CONCRETO** | 6d | 2025-11-08 | 2025-11-14 |  | 37d |  | 3,623.18 | 02.02.04 | 7 días |
| 127 | 1.3.1.2.4.1 | **CIMIENTOS CORRIDOS** | 6d | 2025-11-08 | 2025-11-14 |  | 37d |  | 3,623.18 | 02.02.04.01 | 7 días |
| 128 | 1.3.1.2.4.1.1 | CONCRETO PARA CIMIENTO CORRIDO | 2d | 2025-11-08 | 2025-11-10 | 123 | 37d | 0d | 1,559.63 | 02.02.04.01.01 | 3 días |
| 129 | 1.3.1.2.4.1.2 | **SOBRECIMIENTOS** | 4d | 2025-11-10 | 2025-11-14 |  | 37d |  | 2,063.55 | 02.02.04.01.02 | 5 días |
| 130 | 1.3.1.2.4.1.2.1 | CONCRETO | 1d | 2025-11-13 | 2025-11-14 | 131 | 37d | 0d | 673.24 | 02.02.04.01.02.01 | 2 días |
| 131 | 1.3.1.2.4.1.2.2 | ENCOFRADO | 3d | 2025-11-10 | 2025-11-13 | 128 | 37d | 0d | 1,390.31 | 02.02.04.01.02.02 | 4 días |
| 132 | 1.3.1.2.5 | **OBRAS DE CONCRETO ARMADO** | 13d | 2025-11-24 | 2025-12-07 |  | 37d |  | 9,724.89 | 02.02.05 | 14 días |
| 133 | 1.3.1.2.5.1 | **LOSA MACIZA TECHO DE KITCHENETTE** | 13d | 2025-11-24 | 2025-12-07 |  | 37d |  | 9,724.89 | 02.02.05.01 | 14 días |
| 134 | 1.3.1.2.5.1.1 | CONCRETO | 1d | 2025-11-28 | 2025-11-29 | 136 | 37d | 0d | 2,266.53 | 02.02.05.01.01 | 2 días |
| 135 | 1.3.1.2.5.1.2 | ENCOFRADO | 2d | 2025-11-24 | 2025-11-26 | 282 | 37d | 0d | 4,102.17 | 02.02.05.01.02 | 3 días |
| 136 | 1.3.1.2.5.1.3 | ACERO | 2d | 2025-11-26 | 2025-11-28 | 135 | 37d | 0d | 1,905.5 | 02.02.05.01.03 | 3 días |
| 137 | 1.3.1.2.5.1.4 | **MESA PARA KITCHENETE** | 2d | 2025-12-05 | 2025-12-07 |  | 75d |  | 1,450.69 | 02.02.05.01.04 | 3 días |
| 138 | 1.3.1.2.5.1.4.1 | MESA DE CONCRETO PARA KITCHENETTE ACABADO DE CEMENTO PULIDO | 2d | 2025-12-05 | 2025-12-07 | 285 | 75d |  | 1,450.69 | 02.02.05.01.04.01 | 3 días |
| 139 | 1.3.1.2.6 | **ESTRUCTURA DE ALUMINIO TACTO MADERA** | 6d | 2025-12-19 | 2025-12-25 |  | 57d |  | 13,521.02 | 02.02.06 | 7 días |
| 140 | 1.3.1.2.6.1 | LISTONES PARA DIVISION DE AMBIENTE H=3.20M , CON BASE DE CONCRETO H=0.10M | 4d | 2025-12-19 | 2025-12-23 | 323 | 59d |  | 6,403.11 | 02.02.06.01 | 5 días |
| 141 | 1.3.1.2.6.2 | SOL Y SOMBRA | 2d | 2025-12-23 | 2025-12-25 | 324 | 57d |  | 7,117.91 | 02.02.06.02 | 3 días |

| ID | WBS | Task | Duration | Start | Finish | Predecessors | Total slack | Free slack | Cost | Text1 | Text2 |
| --- | --- | --- | --- | --- | --- | --- | --- | --- | --- | --- | --- |
| 142 | 1.3.1.3 | **COLUMBARIO** | 76d | 2025-11-06 | 2026-01-21 |  | 0d |  | 140,823.11 | 02.03 | 77 días |
| 143 | 1.3.1.3.1 | **MOVIMIENTO DE TIERRAS** | 52d | 2025-11-06 | 2025-12-28 |  | 0d |  | 9,477.41 | 02.03.01 | 53 días |
| 144 | 1.3.1.3.1.1 | **EXCAVACIONES SIMPLES** | 17d | 2025-11-06 | 2025-11-23 |  | 0d |  | 4,124.9 | 02.03.01.01 | 18 días |
| 145 | 1.3.1.3.1.1.1 | EXCAVACIONES SIMPLES PARA PLATEA DE CIMENTACION | 17d | 2025-11-06 | 2025-11-23 | 51FS+9d | 0d |  | 4,124.9 | 02.03.01.01.01 | 18 días |
| 146 | 1.3.1.3.1.2 | **RELLENOS CON MATERIAL DE PRESTAMO** | 2d | 2025-12-26 | 2025-12-28 |  | 48d |  | 1,580.35 | 02.03.01.02 | 3 días |
| 147 | 1.3.1.3.1.2.1 | RELLENO PARA PLATEA DE CIMENTACION | 2d | 2025-12-26 | 2025-12-28 | 159FS-10d | 48d | 0d | 1,580.35 | 02.03.01.02.01 | 3 días |
| 148 | 1.3.1.3.1.3 | **ELIMINACION DE MATERIAL EXCEDENTE** | 1d | 2025-11-25 | 2025-11-26 |  | 86d |  | 3,772.16 | 02.03.01.03 | 2 días |
| 149 | 1.3.1.3.1.3.1 | ELIMINACION MATERIAL EXCEDENTE C/VOLQ. 15M3 D=10KM | 1d | 2025-11-25 | 2025-11-26 | 145FS+2d | 86d |  | 3,772.16 | 02.03.01.03.01 | 2 días |
| 150 | 1.3.1.3.2 | **OBRAS DE CONCRETO SIMPLE** | 39d | 2025-11-25 | 2026-01-03 |  | 0d |  | 5,046.1 | 02.03.02 | 40 días |
| 151 | 1.3.1.3.2.1 | SOLADO C:H 1:10 , e=5cm | 1d | 2025-11-25 | 2025-11-26 | 145FS+2d | 0d |  | 2,161.74 | 02.03.02.01 | 2 días |
| 152 | 1.3.1.3.2.2 | SOBRECIMIENTO C:H 1:6 +25% P.M | 3d | 2025-12-31 | 2026-01-03 | 153 | 48d |  | 2,085.76 | 02.03.02.02 | 4 días |
| 153 | 1.3.1.3.2.3 | ENCOFRADOS Y DESENCOFRADOS NORMAL DE SOBRECIMIENTOS | 3d | 2025-12-28 | 2025-12-31 | 147 | 48d | 0d | 798.6 | 02.03.02.03 | 4 días |
| 154 | 1.3.1.3.3 | **OBRAS DE CONCRETO ARMADO** | 56d | 2025-11-26 | 2026-01-21 |  | 0d |  | 126,299.6 | 02.03.03 | 57 días |
| 155 | 1.3.1.3.3.1 | **PLATEA DE CIMENTACION** | 6d | 2025-11-26 | 2025-12-02 |  | 0d |  | 17,316.57 | 02.03.03.01 | 7 días |
| 156 | 1.3.1.3.3.1.1 | CONCRETO F´C 210 KG/CM2 CIMIENTO ARMADO | 1d | 2025-12-01 | 2025-12-02 | 157 | 0d |  | 10,073.19 | 02.03.03.01.01 | 2 días |
| 157 | 1.3.1.3.3.1.2 | ACERO CORRUGADO FY=4200KG/CM2 GRADO 60 | 5d | 2025-11-26 | 2025-12-01 | 151 | 0d |  | 7,243.38 | 02.03.03.01.02 | 6 días |
| 158 | 1.3.1.3.3.2 | **PLACAS** | 37d | 2025-11-29 | 2026-01-05 |  | 3d |  | 58,670.98 | 02.03.03.02 | 38 días |
| 159 | 1.3.1.3.3.2.1 | CONCRETO F´C 210 KG/CM2 PLACAS | 19d | 2025-12-17 | 2026-01-05 | 160FS-4d | 0d |  | 9,913.37 | 02.03.03.02.01 | 20 días |
| 160 | 1.3.1.3.3.2.2 | ENCOFRADO Y DESENCOFRADO DE PLACAS | 19d | 2025-12-02 | 2025-12-21 | 156 | 0d |  | 37,909.83 | 02.03.03.02.02 | 20 días |
| 161 | 1.3.1.3.3.2.3 | ACERO CORRUGADO FY=4200KG/CM2 GRADO 60 | 19d | 2025-11-29 | 2025-12-18 | 157FS-2d | 64d |  | 10,847.78 | 02.03.03.02.03 | 20 días |
| 162 | 1.3.1.3.3.3 | **LOSA MACIZA** | 16d | 2026-01-05 | 2026-01-21 |  | 0d |  | 50,312.05 | 02.03.03.03 | 17 días |
| 163 | 1.3.1.3.3.3.1 | CONCRETO F'C 210 KG/CM2 - LOSA MACIZA | 4d | 2026-01-17 | 2026-01-21 | 164 | 0d |  | 17,029.19 | 02.03.03.03.01 | 5 días |
| 164 | 1.3.1.3.3.3.2 | ENCOFRADO Y DESENCOFRADO DE LOSA MACIZA | 8d | 2026-01-09 | 2026-01-17 | 165 | 0d |  | 23,523.92 | 02.03.03.03.02 | 9 días |
| 165 | 1.3.1.3.3.3.3 | ACERO CORRUGADO FY=4200KG/CM2 GRADO 60 | 4d | 2026-01-05 | 2026-01-09 | 159 | 0d |  | 9,758.94 | 02.03.03.03.03 | 5 días |

| ID | WBS | Task | Duration | Start | Finish | Predecessors | Total slack | Free slack | Cost | Text1 | Text2 |
| --- | --- | --- | --- | --- | --- | --- | --- | --- | --- | --- | --- |
| 166 | 1.3.1.4 | **SC SUMINISTRO E INSTALACION DE HORNO DE CREMACION Y ELEMENTO** | 115d | 2025-10-28 | 2026-02-20 |  | 0d |  | 398,444.51 | 02.04 | 116 días |
| 167 | 1.3.1.4.1 | SC SUMINISTRO E INSTALACION DE HORNO DE CREMACION Y ELEMENTOS | 115d | 2025-10-28 | 2026-02-20 | 51 | 0d |  | 398,444.51 | 02.04.01 | 116 días |
| 168 | 1.4 | **ARQUITECTURAS** | 96d | 2025-11-16 | 2026-02-20 |  | 0d |  | 347,659.6 |  | 97 días |
| 169 | 1.4.1 | **ARQUITECTURA , SEGURIDAD Y EVACUACION** | 96d | 2025-11-16 | 2026-02-20 |  | 0d |  | 347,659.6 | 03 | 97 días |
| 170 | 1.4.1.1 | **ARQUITECTURA** | 96d | 2025-11-16 | 2026-02-20 |  | 0d |  | 347,659.6 | 03.01 | 97 días |
| 171 | 1.4.1.1.1 | **CREMATORIO** | 73d | 2025-12-09 | 2026-02-20 |  | 0d |  | 236,129.61 | 03.01.01 | 74 días |
| 172 | 1.4.1.1.1.1 | **MUROS Y TABIQUES DE ALBALIÑERIA** | 67d | 2025-12-09 | 2026-02-14 |  | 0d |  | 23,726.67 | 03.01.01.01 | 68 días |
| 173 | 1.4.1.1.1.1.1 | **MUROS Y TABIQUES** | 24d | 2025-12-09 | 2026-01-02 |  | 0d |  | 14,813.33 | 03.01.01.01.01 | 25 días |
| 174 | 1.4.1.1.1.1.1.1 | MURO LADRILLO K.K DE ARCILLA 18H DE SOGA DE MEZCLA C:A 1:4 X 1.5 cm | 24d | 2025-12-09 | 2026-01-02 | 68 | 0d |  | 11,621.72 | 03.01.01.01.01.01 | 25 días |
| 175 | 1.4.1.1.1.1.1.2 | MURO LADRILLO K.K DE ARCILLA 18H DE CABEZA MEZCLA C:A 1;4 X 1.5 cm | 7d | 2025-12-26 | 2026-01-02 | 174FF | 49d |  | 1,064.54 | 03.01.01.01.01.02 | 8 días |
| 176 | 1.4.1.1.1.1.1.3 | PARAPETO DE LADRILLO K.K DE ARCILLA 18 H DE SOGA MEZCLA C:A 1:4 X 1.5CM | 10d | 2025-12-19 | 2025-12-29 | 97 | 35d | 0d | 2,127.07 | 03.01.01.01.01.03 | 11 días |
| 177 | 1.4.1.1.1.1.2 | **TABIQUERIA SECA** | 33d | 2026-01-12 | 2026-02-14 |  | 6d |  | 8,913.34 | 03.01.01.01.02 | 34 días |
| 178 | 1.4.1.1.1.1.2.1 | MURO DE PORTICO NO ESTRUCTURAL DE DRYWALL E=0.25m | 1d | 2026-01-12 | 2026-01-13 | 179SS | 37d | 0d | 567.22 | 03.01.01.01.02.01 | 2 días |
| 179 | 1.4.1.1.1.1.2.2 | ALERO DE DRYWALL EN FRONTIS E=0.25m | 1d | 2026-01-12 | 2026-01-13 | 184 | 36d | 0d | 399.66 | 03.01.01.01.02.02 | 2 días |
| 180 | 1.4.1.1.1.1.2.3 | ALERO DE SUPERBOARDEN LADO LATERAL E= 0.25m | 3d | 2026-01-12 | 2026-01-15 | 179SS | 36d |  | 2,066.78 | 03.01.01.01.02.03 | 4 días |
| 181 | 1.4.1.1.1.1.2.4 | MURO DE DRYWALL RESISTENTE AL FUEGO E=12cm | 3d | 2026-02-11 | 2026-02-14 | 239 | 6d |  | 1,289.1 | 03.01.01.01.02.04 | 4 días |
| 182 | 1.4.1.1.1.1.2.5 | MURO DE CUARTO DE BOMBAS DE DRYWALL E=0.15m | 8d | 2026-01-12 | 2026-01-20 | 223 | 21d | 0d | 4,590.58 | 03.01.01.01.02.05 | 9 días |
| 183 | 1.4.1.1.1.2 | **REVOQUES Y ENLUCIDOS** | 45d | 2025-12-29 | 2026-02-12 |  | 7d |  | 35,063.23 | 03.01.01.02 | 46 días |
| 184 | 1.4.1.1.1.2.1 | TARRAJEO DE MUROS EXTERIORES C:A 1:4 , E=1.5cm ACABADO MICROCEMENTO | 14d | 2025-12-29 | 2026-01-12 | 176 | 35d | 0d | 11,287.88 | 03.01.01.02.01 | 15 días |
| 185 | 1.4.1.1.1.2.2 | TARRAJEO MUROS INTERIORES C:A 1:4 , E=2CM | 13d | 2026-01-05 | 2026-01-18 | 197SS+3d | 0d |  | 4,708.57 | 03.01.01.02.02 | 14 días |
| 186 | 1.4.1.1.1.2.3 | TARRAJEO PRIMARIO EN ENCHAPES | 2d | 2026-01-16 | 2026-01-18 | 185FF | 33d |  | 684.39 | 03.01.01.02.03 | 3 días |
| 187 | 1.4.1.1.1.2.4 | TARRAJEO EN COLUMNAS E=2cm MEZCLA 1:5 | 11d | 2026-01-07 | 2026-01-18 | 185FF | 33d |  | 3,824.39 | 03.01.01.02.04 | 12 días |
| 188 | 1.4.1.1.1.2.5 | TARRAJEO EN VIGAS E=1.5CM MEZCLA 1:5 | 8d | 2026-01-10 | 2026-01-18 | 185FF | 33d |  | 2,574.14 | 03.01.01.02.05 | 9 días |
| 189 | 1.4.1.1.1.2.6 | VESTIDURA DE DERRAMES A=15cm , E=15cm MEZCLA 1:5 | 7d | 2026-01-11 | 2026-01-18 | 185FF | 0d |  | 1,861.02 | 03.01.01.02.06 | 8 días |
| 190 | 1.4.1.1.1.2.7 | TARRAJEO IMPERMEABILIZADO EN CISTERNA | 5d | 2026-01-03 | 2026-01-08 | 108 | 21d | 0d | 3,023.81 | 03.01.01.02.07 | 6 días |
| 191 | 1.4.1.1.1.2.8 | TARRAJEO IMPERMEABILIZADO EN TRAMPA GRASA | 2d | 2026-01-05 | 2026-01-07 | 116 | 44d |  | 779.15 | 03.01.01.02.08 | 3 días |
| 192 | 1.4.1.1.1.2.9 | REVESTIMIENTO DE MURO C/WOOODPANEL DE PVC CON ACABADO DE MADERA | 1d | 2026-01-13 | 2026-01-14 | 178 | 37d |  | 2,582.63 | 03.01.01.02.09 | 2 días |
| 193 | 1.4.1.1.1.2.10 | REVESTIMIENTO DE MURO CON LAMINA DE PIEDRA NATURAL E=2cm C/ PERFORACION EN FORMA DE CRUZ | 1d | 2026-01-12 | 2026-01-13 | 184 | 38d |  | 3,129.49 | 03.01.01.02.10 | 2 días |
| 194 | 1.4.1.1.1.2.11 | REVESTIMIENTO DE MURO CON ACABADO TERRAZO | 1d | 2026-02-11 | 2026-02-12 | 239 | 8d |  | 542.54 | 03.01.01.02.11 | 2 días |
| 195 | 1.4.1.1.1.2.12 | REFUERZO DE MADERA PARA TABLEROS | 1d | 2026-02-11 | 2026-02-12 | 239 | 8d |  | 65.22 | 03.01.01.02.12 | 2 días |

| ID | WBS | Task | Duration | Start | Finish | Predecessors | Total slack | Free slack | Cost | Text1 | Text2 |
| --- | --- | --- | --- | --- | --- | --- | --- | --- | --- | --- | --- |
| 196 | 1.4.1.1.1.3 | **CIELO RASOS** | 24d | 2026-01-02 | 2026-01-26 |  | 0d |  | 9,705.6 | 03.01.01.03 | 25 días |
| 197 | 1.4.1.1.1.3.1 | CIELORASSO CON MEZCLA C:A E=1.5CM | 15d | 2026-01-02 | 2026-01-17 | 174 | 0d |  | 7,174.86 | 03.01.01.03.01 | 16 días |
| 198 | 1.4.1.1.1.3.2 | BLOQUETA DE VIDRIO | 1d | 2026-01-17 | 2026-01-18 | 197 | 33d |  | 259.28 | 03.01.01.03.02 | 2 días |
| 199 | 1.4.1.1.1.3.3 | SUMINISTRO E INSTALACION DE CUBIERTA DE ALUZINC TR4 INCL. ACCESORIOS EN CUARTO DE BOMBAS | 3d | 2026-01-23 | 2026-01-26 | 224 | 21d | 0d | 2,271.46 | 03.01.01.03.03 | 4 días |
| 200 | 1.4.1.1.1.4 | **PISOS Y PAVIMENTOS** | 36d | 2026-01-12 | 2026-02-17 |  | 3d |  | 35,749.46 | 03.01.01.04 | 37 días |
| 201 | 1.4.1.1.1.4.1 | CONTRAPISO E=38mm C:A 1:5 | 2d | 2026-01-18 | 2026-01-20 | 189 | 0d |  | 3,850.32 | 03.01.01.04.01 | 3 días |
| 202 | 1.4.1.1.1.4.2 | PORCELANATO ANTIDESLIZANTE COLOR GRIS PLATA 0.60X0.60 M (fragua 3mm) | 6d | 2026-02-11 | 2026-02-17 | 239 | 0d |  | 6,449.64 | 03.01.01.04.02 | 7 días |
| 203 | 1.4.1.1.1.4.3 | PORCELANATO ANTIDESLIZANTE COLOR BLANCO 0.60X0.60 M (fragua 3mm) | 4d | 2026-02-13 | 2026-02-17 | 202FF | 0d |  | 3,575.54 | 03.01.01.04.03 | 5 días |
| 204 | 1.4.1.1.1.4.4 | PISO DE ADOQUIN RECTANGULAR COLOR GRIS | 1d | 2026-01-12 | 2026-01-13 | 184 | 38d |  | 11,104.49 | 03.01.01.04.04 | 2 días |
| 205 | 1.4.1.1.1.4.5 | PISO DE CONCRETO ACABADO SEMIPULIDO C/IMPERMEABILIZANTE | 4d | 2026-01-12 | 2026-01-16 | 184 | 35d |  | 10,769.47 | 03.01.01.04.05 | 5 días |
| 206 | 1.4.1.1.1.5 | **ZOCALOS Y CONTRAZOCALOS** | 30d | 2026-01-20 | 2026-02-19 |  | 1d |  | 4,112.02 | 03.01.01.05 | 31 días |
| 207 | 1.4.1.1.1.5.1 | ZOCALO DE SS.HH DAMAS Y VARONES H=1.20(PORCELANATO ANTIDESLIZANTE COLOR GRIS 0.60X0.60) | 3d | 2026-02-14 | 2026-02-17 | 202FF | 2d | 0d | 1,903.8 | 03.01.01.05.01 | 4 días |
| 208 | 1.4.1.1.1.5.2 | CONTRAZOCALO DE PORCELANATO COLOR GRIS PLATA PISO H=10 CM | 3d | 2026-02-14 | 2026-02-17 | 202FF | 0d |  | 768.21 | 03.01.01.05.02 | 4 días |
| 209 | 1.4.1.1.1.5.3 | CONTRAZOCALO DE PORCELANATO COLOR BLANCO H=10 CM | 2d | 2026-02-17 | 2026-02-19 | 203 | 1d | 0d | 419.18 | 03.01.01.05.03 | 3 días |
| 210 | 1.4.1.1.1.5.4 | ZOCALO DE PORCELANATO COLOR GRIS PARA CUARTO DE BOMBAS H=0.30M | 1d | 2026-01-20 | 2026-01-21 | 182 | 30d |  | 1,020.83 | 03.01.01.05.04 | 2 días |
| 211 | 1.4.1.1.1.6 | **CARPINTERIA DE MADERA** | 2d | 2026-02-17 | 2026-02-19 |  | 1d |  | 3,703.4 | 03.01.01.06 | 3 días |
| 212 | 1.4.1.1.1.6.1 | SUMINISTRO E INSTALACION DE PUERTA TIPO P-01 DE MADERA CONTRAPLACADA PINTADO COLOR BLANCO CON MARCO | 2d | 2026-02-17 | 2026-02-19 | 209SS | 1d |  | 1,851.7 | 03.01.01.06.01 | 3 días |
| 213 | 1.4.1.1.1.6.2 | SUMINISTRO E INSTALACION DE PUERTA TIPO P-03 DE PUERTA DE DOBLE HOJA DE MADERA CONTRAPLACADA , CON BISAGRA DE 3 1/2" X 3 1/2" ALUMINIZADAS DEL TIPO ACERADO CON MANIJA DE PALANCA CON BURLETE DE ESPUMA DE CAUCHO , SEGUN DISEÑO INCL.CERRAJERIA Y ACCES | 1d | 2026-02-17 | 2026-02-18 | 208 | 2d |  | 925.85 | 03.01.01.06.02 | 2 días |
| 214 | 1.4.1.1.1.6.3 | SUMINISTRO E INSTALACION DE PUERTA TIPO P-04 PUERTA BATIENTE DE MADERA CONTRAPLACADA , CON BISAGRA DE 3 1/2" X 3 1/2" ALUMINIZADA TIPO ACERADO CON MANIJA DE PALANCA CON BURLETE DE ESPUMA DE CAUCHO , SEGUN DISEÑO INCL.CERRAJERIA Y ACCESORIOS. | 1d | 2026-02-17 | 2026-02-18 | 208 | 2d |  | 925.85 | 03.01.01.06.03 | 2 días |
| 215 | 1.4.1.1.1.7 | **CARPINTERIA METALICA** | 41d | 2026-01-08 | 2026-02-18 |  | 2d |  | 8,001.64 | 03.01.01.07 | 42 días |
| 216 | 1.4.1.1.1.7.1 | SUM. E INST.DE REJILLA METALICA SUMIDERO | 1d | 2026-02-17 | 2026-02-18 | 202 | 2d |  | 513.45 | 03.01.01.07.01 | 2 días |
| 217 | 1.4.1.1.1.7.2 | SUM. E INST.DE PERFIL DE TRANSICION DE ACERO INOXIDABLE | 1d | 2026-02-17 | 2026-02-18 | 203 | 2d |  | 28.86 | 03.01.01.07.02 | 2 días |
| 218 | 1.4.1.1.1.7.3 | SUM.E INST. DE BARRA ABATIBLE DE ACERO INOXIDABLE | 1d | 2026-02-17 | 2026-02-18 | 207 | 2d | 0d | 530.86 | 03.01.01.07.03 | 2 días |
| 219 | 1.4.1.1.1.7.4 | SUM.E INST. DE BARRA DE APOYO DE ACERO INOXIDABLE | 1d | 2026-02-17 | 2026-02-18 | 218SS | 2d |  | 556.98 | 03.01.01.07.04 | 2 días |
| 220 | 1.4.1.1.1.7.5 | SUM.E INST. DE ESCALERA DE GATO | 3d | 2026-01-12 | 2026-01-15 | 184 | 36d |  | 1,670.76 | 03.01.01.07.05 | 4 días |
| 221 | 1.4.1.1.1.7.6 | SUM.E INST.DE MARCOS METALICOS Y AGARRADERAS EN CAJA Y TAPA DE CAJAS REGISTROS | 1d | 2026-02-11 | 2026-02-12 | 239 | 8d |  | 818.16 | 03.01.01.07.06 | 2 días |
| 222 | 1.4.1.1.1.7.7 | SUM.E INST.DE TAPA METALICAS PARA CISTERNA | 1d | 2026-01-26 | 2026-01-27 | 199 | 24d |  | 240.65 | 03.01.01.07.07 | 2 días |
| 223 | 1.4.1.1.1.7.8 | SUM.E INST. DE COLUMNAS METALICAS 4"X4" SEGUN DISEÑO INCL.ANCLAJE | 4d | 2026-01-08 | 2026-01-12 | 190 | 21d | 0d | 2,693.56 | 03.01.01.07.08 | 5 días |
| 224 | 1.4.1.1.1.7.9 | SUM.E INST.DE VIGAS METALICAS 4"X4" SEGUN DISEÑO | 3d | 2026-01-20 | 2026-01-23 | 182 | 21d | 0d | 425.86 | 03.01.01.07.09 | 4 días |
| 225 | 1.4.1.1.1.7.10 | SUM.E INST.DE P-05 PUERTA DE ALUMINIO C/REJILLA DE ALUMINIO INCL.BISAGRA ALUMINIZADA 3 1/2" X 3 1/2" C/MANIJA DE PALANCA | 1d | 2026-01-26 | 2026-01-27 | 199 | 21d | 0d | 522.5 | 03.01.01.07.10 | 2 días |

| ID | WBS | Task | Duration | Start | Finish | Predecessors | Total slack | Free slack | Cost | Text1 | Text2 |
| --- | --- | --- | --- | --- | --- | --- | --- | --- | --- | --- | --- |
| 226 | 1.4.1.1.1.8 | **VIDRIOS Y CRISTALES** | 9d | 2026-02-11 | 2026-02-20 |  | 0d |  | 27,649.88 | 03.01.01.08 | 10 días |
| 227 | 1.4.1.1.1.8.1 | SUM.E INST.PUERTA P-02 DE DOBLE HOJA VAIVEN DE VIDRIO TEMPLADO E=8MM | 3d | 2026-02-17 | 2026-02-20 | 208 | 0d |  | 5,285.96 | 03.01.01.08.01 | 4 días |
| 228 | 1.4.1.1.1.8.2 | SUM.E INST. DE VENTANA V-01 DE PAÑO SUPERIOR ; VENTANA PIVOTANTE VERTICAL DE VIDRIO TEMPLADO 8MM CON MARCO DE ALUMINIO COLOR NEGRO (SE ELEVA 60 GRADOS ), PAÑO INFERIOR; VENTANA FIJA CON VIDRIO CON VIDRIO TEMPLADO DE 8MM Y MARCO DE ALUMINIO COLOR NE | 2d | 2026-02-11 | 2026-02-13 | 239 | 7d |  | 1,090.75 | 03.01.01.08.02 | 3 días |
| 229 | 1.4.1.1.1.8.3 | SUM.E INST. DE VENTANA V-02 DE PAÑO SUPERIOR ; VENTANA PIVOTANTE VERTICAL DE VIDRIO TEMPLADO 8MM CON MARCO DE ALUMINIO COLOR NEGRO (SE ELEVA 60 GRADOS ), PAÑO INFERIOR; VENTANA FIJA CON VIDRIO CON VIDRIO TEMPLADO DE 8MM Y MARCO DE ALUMINIO COLOR NE | 2d | 2026-02-11 | 2026-02-13 | 239 | 7d |  | 2,768.83 | 03.01.01.08.03 | 3 días |
| 230 | 1.4.1.1.1.8.4 | SUM.E INST. DE VENTANA V-03 DE PAÑO SUPERIOR ; VENTANA PIVOTANTE VERTICAL DE VIDRIO TEMPLADO 8MM CON MARCO DE ALUMINIO COLOR NEGRO (SE ELEVA 60 GRADOS ), PAÑO INFERIOR; VENTANA FIJA CON VIDRIO CON VIDRIO TEMPLADO DE 8MM Y MARCO DE ALUMINIO COLOR NE | 2d | 2026-02-11 | 2026-02-13 | 239 | 7d |  | 4,027.39 | 03.01.01.08.04 | 3 días |
| 231 | 1.4.1.1.1.8.5 | SUM.E INST. DE VENTANA V-04, FIJA DE VIDRIO TEMPLADO DE 8MM Y MARCO DE ALUMINIO COLOR NEGRO , SEGUN DISEÑO ,INCL.CERRAJERIA Y ACCESORIOS | 2d | 2026-02-11 | 2026-02-13 | 239 | 7d |  | 1,006.85 | 03.01.01.08.05 | 3 días |
| 232 | 1.4.1.1.1.8.6 | SUM.E INST. DE VENTANA V-05, FIJA DE VIDRIO TEMPLADO DE 8MM Y MARCO DE ALUMINIO COLOR NEGRO , SEGUN DISEÑO ,INCL.CERRAJERIA Y ACCESORIOS | 2d | 2026-02-11 | 2026-02-13 | 239 | 7d |  | 1,090.76 | 03.01.01.08.06 | 3 días |
| 233 | 1.4.1.1.1.8.7 | SUM.E INST. DE VENTANA V-06 DE PAÑO SUPERIOR ; VENTANA PIVOTANTE VERTICAL DE VIDRIO TEMPLADO 8MM CON MARCO DE ALUMINIO COLOR NEGRO (SE ELEVA 60 GRADOS ), PAÑO INFERIOR; VENTANA FIJA CON VIDRIO CON VIDRIO TEMPLADO DE 8MM Y MARCO DE ALUMINIO COLOR NE | 1d | 2026-02-11 | 2026-02-12 | 239 | 8d |  | 1,887.84 | 03.01.01.08.07 | 2 días |
| 234 | 1.4.1.1.1.8.8 | SUM.E INST. DE VENTANA V-07 DE PAÑO SUPERIOR ; VENTANA PIVOTANTE VERTICAL DE VIDRIO TEMPLADO 8MM CON MARCO DE ALUMINIO COLOR NEGRO (SE ELEVA 60 GRADOS ), PAÑO INFERIOR; VENTANA FIJA CON VIDRIO CON VIDRIO TEMPLADO DE 8MM Y MARCO DE ALUMINIO COLOR NE | 1d | 2026-02-11 | 2026-02-12 | 239 | 0d |  | 1,975.24 | 03.01.01.08.08 | 2 días |
| 235 | 1.4.1.1.1.8.9 | SUM.E INST. DE VENTANA VA-1 DE 3 CUERPOS PIVOTANTE VERTICAL, CON APERTURA DE 60 GRADOS DE VIDRIO | 8d | 2026-02-12 | 2026-02-20 | 234 | 0d |  | 2,726.88 | 03.01.01.08.09 | 9 días |
| 236 | 1.4.1.1.1.8.10 | SUM.E INST. DE MAMPARA M-01, PAÑO SUPERIOR; FIJA DE VIDRIO TEMPLADO E=8MM MARCO DE ALUMINIO NEGRO , PAÑO INFERIOR : MAMPARA CORREDIZA CON JALADOR EMBUTIDO , SEGUN DISEÑO , INCL.CERRAJERIA Y ACCESORIOS | 1d | 2026-02-18 | 2026-02-19 | 227FF-1d | 0d |  | 2,936.64 | 03.01.01.08.10 | 2 días |
| 237 | 1.4.1.1.1.8.11 | SUM.E INST .DE MAMPARA M-02 , PAÑO SUPERIOR ; FIJA DE VIDRIO TEMPLADO E=8MM MARCO DE ALUMINIO NEGRO, PAÑO INFERIOR ; MURO CORTINA SEGUN DISEÑO . INCL.CERRAJERIA Y ACCESORIOS | 2d | 2026-02-18 | 2026-02-20 | 236SS | 0d |  | 2,852.74 | 03.01.01.08.11 | 3 días |
| 238 | 1.4.1.1.1.9 | **PINTURAS** | 22d | 2026-01-20 | 2026-02-11 |  | 0d |  | 8,141.11 | 03.01.01.09 | 23 días |
| 239 | 1.4.1.1.1.9.1 | PINTURA MATE LAVABLE COLOR BLANCO 2 MANOS EN INTERIORES | 17d | 2026-01-25 | 2026-02-11 | 240 | 0d |  | 6,222.4 | 03.01.01.09.01 | 18 días |
| 240 | 1.4.1.1.1.9.2 | PINTURA BLANCA EN CIELO RASSO C/IMPRIMANTE (2 MANOS) ACABADO MATE LAVABLE | 5d | 2026-01-20 | 2026-01-25 | 201 | 0d |  | 1,918.71 | 03.01.01.09.02 | 6 días |
| 241 | 1.4.1.1.1.10 | **VARIOS** | 39d | 2026-01-12 | 2026-02-20 |  | 0d |  | 44,184.82 | 03.01.01.10 | 40 días |
| 242 | 1.4.1.1.1.10.1 | SUM. E INST DEL LOGO METALICO GRIS MATE | 1d | 2026-01-12 | 2026-01-13 | 184 | 37d | 0d | 5,823.03 | 03.01.01.10.01 | 2 días |
| 243 | 1.4.1.1.1.10.2 | SUM. E INST DE LETRAS METALICAS GRIS MATE GRANDES H=0.35M | 1d | 2026-01-13 | 2026-01-14 | 242 | 37d |  | 14,276.6 | 03.01.01.10.02 | 2 días |
| 244 | 1.4.1.1.1.10.3 | SUM. E INST DE LETRAS METALICAS GRIS MATE MEDIANAS H=0.18M | 1d | 2026-01-12 | 2026-01-13 | 242SS | 38d |  | 10,476.6 | 03.01.01.10.03 | 2 días |
| 245 | 1.4.1.1.1.10.4 | SUM. E INST DE LETRAS METALICAS GRIS MATE PEQUEÑAS H=0.10M | 1d | 2026-01-12 | 2026-01-13 | 242SS | 38d |  | 10,014.9 | 03.01.01.10.04 | 2 días |
| 246 | 1.4.1.1.1.10.5 | SUM. E INST CELOSIA DIVISORIA | 3d | 2026-02-17 | 2026-02-20 | 203 | 0d |  | 2,296.35 | 03.01.01.10.05 | 4 días |
| 247 | 1.4.1.1.1.10.6 | LIMPIEZA FINAL DE OBRA | 2d | 2026-02-17 | 2026-02-19 | 246SS | 1d |  | 1,297.34 | 03.01.01.10.06 | 3 días |
| 248 | 1.4.1.1.1.11 | **EQUIPAMIENTO MOBILIARIO** | 14d | 2026-02-06 | 2026-02-20 |  | 0d |  | 33,561.75 | 03.01.01.11 | 15 días |
| 249 | 1.4.1.1.1.11.1 | **EQUIPAMIENTO** | 14d | 2026-02-06 | 2026-02-20 |  | 0d |  | 31,071.96 | 03.01.01.11.01 | 15 días |
| 250 | 1.4.1.1.1.11.1.1 | SUM.E INST.DE TANQUE DE GLP | 14d | 2026-02-06 | 2026-02-20 | 167FS-14d | 0d |  | 31,071.96 | 03.01.01.11.01.01 | 15 días |

| ID | WBS | Task | Duration | Start | Finish | Predecessors | Total slack | Free slack | Cost | Text1 | Text2 |
| --- | --- | --- | --- | --- | --- | --- | --- | --- | --- | --- | --- |
| 251 | 1.4.1.1.1.11.2 | **MOBILIARIO DE AMBIENTE DE CREMACION** | 3d | 2026-02-17 | 2026-02-20 |  | 0d |  | 2,489.79 | 03.01.01.11.02 | 4 días |
| 252 | 1.4.1.1.1.11.2.1 | SUM.E INST. DE MESA DE ACERO INOXIDABLE CON PUERTAS SEGUN DISEÑO INC.ACCESORIOS | 3d | 2026-02-17 | 2026-02-20 | 208 | 0d |  | 2,116.52 | 03.01.01.11.02.01 | 4 días |
| 253 | 1.4.1.1.1.11.2.2 | SUM. E INST. DE LAVADERO DE ACERO INOXIDABLE INCL ACCESORIOS | 3d | 2026-02-17 | 2026-02-20 | 252SS | 0d |  | 373.27 | 03.01.01.11.02.02 | 4 días |
| 254 | 1.4.1.1.1.12 | **SEGURIDAD Y EVACUACION** | 2d | 2026-02-11 | 2026-02-13 |  | 7d |  | 2,530.03 | 03.01.01.12 | 3 días |
| 255 | 1.4.1.1.1.12.1 | **ADQUISION DE ALARMAS SONORA** | 2d | 2026-02-11 | 2026-02-13 |  | 7d |  | 47.63 | 03.01.01.12.01 | 3 días |
| 256 | 1.4.1.1.1.12.1.1 | SUM. E INST. DE SISTEMA DE ALARMA SONORA | 2d | 2026-02-11 | 2026-02-13 | 239 | 7d |  | 47.63 | 03.01.01.12.01.01 | 3 días |
| 257 | 1.4.1.1.1.12.2 | **ADQUISICION DE EXTINTORES** | 1d | 2026-02-12 | 2026-02-13 |  | 7d |  | 2,042.66 | 03.01.01.12.02 | 2 días |
| 258 | 1.4.1.1.1.12.2.1 | SUM. DE EXTINTOR FR POLVO QUIMICO | 1d | 2026-02-12 | 2026-02-13 | 262 | 7d | 0d | 257.43 | 03.01.01.12.02.01 | 2 días |
| 259 | 1.4.1.1.1.12.2.2 | SUM. DE EXTINTOR DE ESPUMA | 1d | 2026-02-12 | 2026-02-13 | 258SS | 7d | 0d | 867.21 | 03.01.01.12.02.02 | 2 días |
| 260 | 1.4.1.1.1.12.2.3 | SUM. DE EXTINTOR DE GAS CARBONICO | 1d | 2026-02-12 | 2026-02-13 | 259SS | 7d |  | 918.02 | 03.01.01.12.02.03 | 2 días |
| 261 | 1.4.1.1.1.12.3 | **ADQUISICION DE SEÑALIZACION** | 1d | 2026-02-11 | 2026-02-12 |  | 7d |  | 439.74 | 03.01.01.12.03 | 2 días |
| 262 | 1.4.1.1.1.12.3.1 | SUM. E INST. DE SEÑALIZACION DE RIESGO ELECTRICO DE MATERIAL PVC(AUTOADHESIVO 0.20X0.30) | 1d | 2026-02-11 | 2026-02-12 | 239 | 7d | 0d | 36.9 | 03.01.01.12.03.01 | 2 días |
| 263 | 1.4.1.1.1.12.3.2 | SUM. E INST. DE SEÑALIZACION DE POZO TIERRA DE MATERIAL PVC(AUTOADHESIVO 0.20X0.30) | 1d | 2026-02-11 | 2026-02-12 | 262SS | 8d |  | 7.38 | 03.01.01.12.03.02 | 2 días |
| 264 | 1.4.1.1.1.12.3.3 | SUM. E INST. DE SEÑALIZACION DE AVISADOR SONORO DE MATERIAL PVC(AUTOADHESIVO 0.20X0.30) | 1d | 2026-02-11 | 2026-02-12 | 262SS | 8d |  | 29.52 | 03.01.01.12.03.03 | 2 días |
| 265 | 1.4.1.1.1.12.3.4 | SUM. E INST. DE SEÑALIZACION DE SALIDA DE MATERIAL PVC(AUTOADHESIVO 0.20X0.30) | 1d | 2026-02-11 | 2026-02-12 | 262SS | 8d |  | 22.14 | 03.01.01.12.03.04 | 2 días |
| 266 | 1.4.1.1.1.12.3.5 | SUM. E INST. DE SEÑALIZACION DE RUTA DE EVACUACION DE "SALIDA A LA IZQUIERDA" DE MATERIAL PVC(AUTOADHESIVO 0.20X0.30) | 1d | 2026-02-11 | 2026-02-12 | 262SS | 8d |  | 22.14 | 03.01.01.12.03.05 | 2 días |
| 267 | 1.4.1.1.1.12.3.6 | SUM. E INST. DE SEÑALIZACION DE RUTA DE EVACUACION DE "SALIDA A LA DERECHA" DE MATERIAL PVC(AUTOADHESIVO 0.20X0.30) | 1d | 2026-02-11 | 2026-02-12 | 262SS | 8d |  | 14.76 | 03.01.01.12.03.06 | 2 días |
| 268 | 1.4.1.1.1.12.3.7 | SUM. E INST. DE SEÑALIZACION DEPULSADOR DE ALARMA (AUTOADHESIVO 0.20X0.30) | 1d | 2026-02-11 | 2026-02-12 | 262SS | 8d |  | 29.52 | 03.01.01.12.03.07 | 2 días |
| 269 | 1.4.1.1.1.12.3.8 | SUM. E INST. DE SEÑALIZACION DE UBICACION DE EXTINTOR DE POLVO QUIMICO(AUTOADHESIVO 0.20X0.30) | 1d | 2026-02-11 | 2026-02-12 | 262SS | 8d |  | 14.76 | 03.01.01.12.03.08 | 2 días |
| 270 | 1.4.1.1.1.12.3.9 | SUM. E INST. DE SEÑALIZACION DE UBICACION DE EXTINTOR DE ESPUMA (AUTOADHESIVO 0.20X0.30) | 1d | 2026-02-11 | 2026-02-12 | 262SS | 8d |  | 7.38 | 03.01.01.12.03.09 | 2 días |
| 271 | 1.4.1.1.1.12.3.10 | SUM. E INST. DE SEÑALIZACION DE UBICACION DE EXTINTOR DE GAS CARBONICO (AUTOADHESIVO 0.20X0.30) | 1d | 2026-02-11 | 2026-02-12 | 262SS | 8d |  | 22.14 | 03.01.01.12.03.10 | 2 días |
| 272 | 1.4.1.1.1.12.3.11 | SUM. E INST. DE SEÑALIZACION DE BOTIQUIN DE PRIMEROS AUXILIOS DE MATERIAL PVC (AUTOADHESIVO 0.20X0.30) | 1d | 2026-02-11 | 2026-02-12 | 262SS | 8d |  | 7.38 | 03.01.01.12.03.11 | 2 días |
| 273 | 1.4.1.1.1.12.3.12 | SUM. E INST. DE SEÑALIZACION DE AREA RESTRINGIDA DE MATERIAL PVC (AUTOADHESIVO 0.20X0.30) | 1d | 2026-02-11 | 2026-02-12 | 262SS | 8d |  | 29.52 | 03.01.01.12.03.12 | 2 días |
| 274 | 1.4.1.1.1.12.3.13 | SUM. E INST. DE SEÑALIZACION DE LUZ DE EMERGENCIA CONECTADA A CIRCUITO DE MATERIAL PVC (AUTOADHESIVO 0.20X0.30) | 1d | 2026-02-11 | 2026-02-12 | 262SS | 8d |  | 51.66 | 03.01.01.12.03.13 | 2 días |
| 275 | 1.4.1.1.1.12.3.14 | SUM. E INST. DE SEÑALIZACION DE CENTRAL DE ALARMA CONTRA INCENDIO DE MATERIAL PVC(AUTOADHESIVO 0.20X0.30) | 1d | 2026-02-11 | 2026-02-12 | 262SS | 8d |  | 12.24 | 03.01.01.12.03.14 | 2 días |
| 276 | 1.4.1.1.1.12.3.15 | SUM. E INST. DE SEÑALIZACION DE DETECTOR DE TEMPERATURA | 1d | 2026-02-11 | 2026-02-12 | 262SS | 8d |  | 48.96 | 03.01.01.12.03.15 | 2 días |
| 277 | 1.4.1.1.1.12.3.16 | SUM. E INST. DE SEÑALIZACION DE DETECTOR DE HUMO | 1d | 2026-02-11 | 2026-02-12 | 262SS | 8d |  | 61.2 | 03.01.01.12.03.16 | 2 días |
| 278 | 1.4.1.1.1.12.3.17 | SUM. E INST. DE SEÑALIZACION DE LETRERO DE CAPACIDAD DE AFORO DE MATERIAL PVC AUTOADHESIVO | 1d | 2026-02-11 | 2026-02-12 | 262SS | 8d |  | 7.38 | 03.01.01.12.03.17 | 2 días |
| 279 | 1.4.1.1.1.12.3.18 | SUM. E INST. DE SEÑALIZACION DE BAÑOS DE MATERIAL DE PVC AUTOADHESIVO (0.20X0.30M) | 1d | 2026-02-11 | 2026-02-12 | 262SS | 8d |  | 14.76 | 03.01.01.12.03.18 | 2 días |

| ID | WBS | Task | Duration | Start | Finish | Predecessors | Total slack | Free slack | Cost | Text1 | Text2 |
| --- | --- | --- | --- | --- | --- | --- | --- | --- | --- | --- | --- |
| 280 | 1.4.1.1.2 | **VELATORIO** | 59d | 2025-11-16 | 2026-01-14 |  | 37d |  | 43,461.65 | 03.01.02 | 60 días |
| 281 | 1.4.1.1.2.1 | **MUROS Y TABIQUES DE ALBALIÑERIA** | 8d | 2025-11-16 | 2025-11-24 |  | 37d |  | 2,475.32 | 03.01.02.01 | 9 días |
| 282 | 1.4.1.1.2.1.1 | MURO DE SOGA LADRILLO KING KONG TIPO IV | 8d | 2025-11-16 | 2025-11-24 | 121 | 37d | 0d | 2,475.32 | 03.01.02.01.01 | 9 días |
| 283 | 1.4.1.1.2.2 | **REVOQUES Y REVESTIMIENTOS** | 12d | 2025-11-29 | 2025-12-11 |  | 37d |  | 3,082.76 | 03.01.02.02 | 13 días |
| 284 | 1.4.1.1.2.2.1 | PREPARACION DE SUPERFICIE | 2d | 2025-11-29 | 2025-12-01 | 134 | 37d | 0d | 1,110.39 | 03.01.02.02.01 | 3 días |
| 285 | 1.4.1.1.2.2.2 | TARRAJEO EN INTERIORES C/A 1:5 e=1.50cm | 4d | 2025-12-01 | 2025-12-05 | 284 | 37d | 0d | 897.9 | 03.01.02.02.02 | 5 días |
| 286 | 1.4.1.1.2.2.3 | TARRAJEO EN EXTERIORES C/A 1:5 e=1.50cm | 3d | 2025-12-05 | 2025-12-08 | 285 | 37d | 0d | 437.88 | 03.01.02.02.03 | 4 días |
| 287 | 1.4.1.1.2.2.4 | VESTIDURA DE DERRAMES C:A 1:5 e=1.5 Cm | 3d | 2025-12-08 | 2025-12-11 | 286 | 37d | 0d | 488.13 | 03.01.02.02.04 | 4 días |
| 288 | 1.4.1.1.2.2.5 | TARRAJEO EN DUCTOS | 2d | 2025-12-08 | 2025-12-10 | 287SS | 72d |  | 148.46 | 03.01.02.02.05 | 3 días |
| 289 | 1.4.1.1.2.3 | **CIELO RASOS** | 5d | 2025-11-29 | 2025-12-04 |  | 78d |  | 369.12 | 03.01.02.03 | 6 días |
| 290 | 1.4.1.1.2.3.1 | CIELORRASO CON MEZCLA | 3d | 2025-12-01 | 2025-12-04 | 284 | 78d |  | 189.29 | 03.01.02.03.01 | 4 días |
| 291 | 1.4.1.1.2.3.2 | SUMINISTRO E INSTALACION DE LADRILLO PASTELERO EN TECHO | 3d | 2025-11-29 | 2025-12-02 | 134 | 80d |  | 179.83 | 03.01.02.03.02 | 4 días |
| 292 | 1.4.1.1.2.4 | **PISOS Y PAVIMENTOS** | 28d | 2025-12-05 | 2026-01-02 |  | 43d |  | 6,862.68 | 03.01.02.04 | 29 días |
| 293 | 1.4.1.1.2.4.1 | **CONTRAPISOS** | 2d | 2025-12-11 | 2025-12-13 |  | 37d |  | 1,580.55 | 03.01.02.04.01 | 3 días |
| 294 | 1.4.1.1.2.4.1.1 | CONTRAPISO C:A 1:5 e=4" | 2d | 2025-12-11 | 2025-12-13 | 287 | 37d | 0d | 1,580.55 | 03.01.02.04.01.01 | 3 días |
| 295 | 1.4.1.1.2.4.2 | **PISOS** | 28d | 2025-12-05 | 2026-01-02 |  | 49d |  | 5,282.13 | 03.01.02.04.02 | 29 días |
| 296 | 1.4.1.1.2.4.2.1 | PORCELANATO COLOR GRIS | 3d | 2025-12-30 | 2026-01-02 | 297FF | 49d |  | 157.26 | 03.01.02.04.02.01 | 4 días |
| 297 | 1.4.1.1.2.4.2.2 | PORCELANATO COLOR ARENA | 10d | 2025-12-23 | 2026-01-02 | 324 | 37d | 0d | 5,069.47 | 03.01.02.04.02.02 | 11 días |
| 298 | 1.4.1.1.2.4.2.3 | ADOQUINES DE CONCRETO | 4d | 2025-12-05 | 2025-12-09 | 285 | 73d |  | 55.4 | 03.01.02.04.02.03 | 5 días |
| 299 | 1.4.1.1.2.5 | **ZOCALOS Y CONTRAZOCALOS** | 17d | 2025-12-23 | 2026-01-09 |  | 42d |  | 914.75 | 03.01.02.05 | 18 días |
| 300 | 1.4.1.1.2.5.1 | **ZOCALOS** | 4d | 2026-01-02 | 2026-01-06 |  | 37d |  | 832.37 | 03.01.02.05.01 | 5 días |
| 301 | 1.4.1.1.2.5.1.1 | PORCELANATO | 4d | 2026-01-02 | 2026-01-06 | 297 | 37d | 0d | 832.37 | 03.01.02.05.01.01 | 5 días |
| 302 | 1.4.1.1.2.5.2 | **CONTRAZOCALOS** | 17d | 2025-12-23 | 2026-01-09 |  | 42d |  | 82.38 | 03.01.02.05.02 | 18 días |
| 303 | 1.4.1.1.2.5.2.1 | PORCELANATO. | 3d | 2026-01-06 | 2026-01-09 | 301 | 37d | 0d | 49.86 | 03.01.02.05.02.01 | 4 días |
| 304 | 1.4.1.1.2.5.2.2 | PINTADO DE CONTRAZOCALOS COLOR NEGRO | 1d | 2025-12-23 | 2025-12-24 | 324 | 58d |  | 32.52 | 03.01.02.05.02.02 | 2 días |

| ID | WBS | Task | Duration | Start | Finish | Predecessors | Total slack | Free slack | Cost | Text1 | Text2 |
| --- | --- | --- | --- | --- | --- | --- | --- | --- | --- | --- | --- |
| 305 | 1.4.1.1.2.6 | **CARPINTERIA DE MADERA Y METALICA** | 17d | 2025-12-26 | 2026-01-12 |  | 39d |  | 8,283.35 | 03.01.02.06 | 18 días |
| 306 | 1.4.1.1.2.6.1 | **VENTANAS** | 6d | 2025-12-26 | 2026-01-01 |  | 50d |  | 946.29 | 03.01.02.06.01 | 7 días |
| 307 | 1.4.1.1.2.6.1.1 | REUBICACION Y PAVONADO DE VENTANA V-1 | 2d | 2025-12-28 | 2025-12-30 | 310 | 50d | 0d | 159.63 | 03.01.02.06.01.01 | 3 días |
| 308 | 1.4.1.1.2.6.1.2 | REUBICACION DE VENTANA VA-1 | 2d | 2025-12-30 | 2026-01-01 | 307 | 50d |  | 14.72 | 03.01.02.06.01.02 | 3 días |
| 309 | 1.4.1.1.2.6.1.3 | VENTANA VA-2 | 2d | 2025-12-28 | 2025-12-30 | 310 | 52d |  | 445.32 | 03.01.02.06.01.03 | 3 días |
| 310 | 1.4.1.1.2.6.1.4 | MANTENIMIENTO Y PAVONADO DE VENTANAS | 2d | 2025-12-26 | 2025-12-28 | 326 | 50d | 0d | 326.62 | 03.01.02.06.01.04 | 3 días |
| 311 | 1.4.1.1.2.6.2 | **PUERTAS** | 2d | 2026-01-10 | 2026-01-12 |  | 37d |  | 3,356.08 | 03.01.02.06.02 | 3 días |
| 312 | 1.4.1.1.2.6.2.1 | PUERTA P-01 | 2d | 2026-01-10 | 2026-01-12 | 325 | 39d |  | 2,685.04 | 03.01.02.06.02.01 | 3 días |
| 313 | 1.4.1.1.2.6.2.2 | PUERTA P-02 | 2d | 2026-01-10 | 2026-01-12 | 325 | 37d | 0d | 671.04 | 03.01.02.06.02.02 | 3 días |
| 314 | 1.4.1.1.2.6.3 | **MAMPARAS** | 3d | 2025-12-28 | 2025-12-31 |  | 50d |  | 3,980.98 | 03.01.02.06.03 | 4 días |
| 315 | 1.4.1.1.2.6.3.1 | MAMPARA-01 | 3d | 2025-12-28 | 2025-12-31 | 310 | 50d | 0d | 3,980.98 | 03.01.02.06.03.01 | 4 días |
| 316 | 1.4.1.1.2.7 | **CERRAJERIA** | 11d | 2025-12-31 | 2026-01-11 |  | 40d |  | 432.64 | 03.01.02.07 | 12 días |
| 317 | 1.4.1.1.2.7.1 | BISAGRA PARA PUERTA P-01 | 1d | 2026-01-10 | 2026-01-11 | 325 | 40d |  | 99.32 | 03.01.02.07.01 | 2 días |
| 318 | 1.4.1.1.2.7.2 | BISAGRA PARA PUERTA P-02 | 1d | 2026-01-10 | 2026-01-11 | 325 | 40d |  | 49.66 | 03.01.02.07.02 | 2 días |
| 319 | 1.4.1.1.2.7.3 | CERRADURA PARA M-01 | 1d | 2025-12-31 | 2026-01-01 | 315 | 50d |  | 88.97 | 03.01.02.07.03 | 2 días |
| 320 | 1.4.1.1.2.7.4 | CERRADURA PARA P-01 | 1d | 2026-01-10 | 2026-01-11 | 325 | 40d |  | 105.72 | 03.01.02.07.04 | 2 días |
| 321 | 1.4.1.1.2.7.5 | CERRADURA PARA P-02 | 1d | 2026-01-10 | 2026-01-11 | 325 | 40d |  | 88.97 | 03.01.02.07.05 | 2 días |
| 322 | 1.4.1.1.2.8 | **PINTURAS** | 28d | 2025-12-13 | 2026-01-10 |  | 37d |  | 15,445.06 | 03.01.02.08 | 29 días |
| 323 | 1.4.1.1.2.8.1 | PINTURA DE CIELOS RASO Y PAREDES | 6d | 2025-12-13 | 2025-12-19 | 294 | 37d | 0d | 2,397.08 | 03.01.02.08.01 | 7 días |
| 324 | 1.4.1.1.2.8.2 | ACABADO DE ESTUCADO COLOR GRIS CEMENTO | 7d | 2025-12-16 | 2025-12-23 | 323FS-3d | 37d | 0d | 10,959.35 | 03.01.02.08.02 | 8 días |
| 325 | 1.4.1.1.2.8.3 | PINTURA DE PUERTAS | 1d | 2026-01-09 | 2026-01-10 | 303 | 37d | 0d | 285.12 | 03.01.02.08.03 | 2 días |
| 326 | 1.4.1.1.2.8.4 | PINTURA DE DERRAMES | 3d | 2025-12-23 | 2025-12-26 | 324 | 50d | 0d | 1,038.62 | 03.01.02.08.04 | 4 días |
| 327 | 1.4.1.1.2.8.5 | ACABADO DE FACHALETA H=5CM C/LARGOS VARIABLES | 3d | 2025-12-23 | 2025-12-26 | 324 | 53d | 0d | 764.89 | 03.01.02.08.05 | 4 días |
| 328 | 1.4.1.1.2.9 | **VARIOS** | 37d | 2025-12-08 | 2026-01-14 |  | 37d |  | 4,831.45 | 03.01.02.09 | 38 días |
| 329 | 1.4.1.1.2.9.1 | LIMPIEZA PERMANENTE DE OBRA | 3d | 2025-12-26 | 2025-12-29 | 327 | 53d |  | 2,798.42 | 03.01.02.09.01 | 4 días |
| 330 | 1.4.1.1.2.9.2 | SUMINISTRO E INSTALACION DE CRUZ EN PARED | 1d | 2025-12-26 | 2025-12-27 | 327 | 55d |  | 265.58 | 03.01.02.09.02 | 2 días |
| 331 | 1.4.1.1.2.9.3 | SUMINISTRO E INSTALACION DE LOSETA PIEDRA DE 0.40x0.40 E=1/2", EN MUROS EXTERIOR | 1d | 2025-12-08 | 2025-12-09 | 286 | 73d |  | 371.07 | 03.01.02.09.03 | 2 días |
| 332 | 1.4.1.1.2.9.4 | LIMPIEZA FINAL | 2d | 2026-01-12 | 2026-01-14 | 313 | 37d |  | 1,396.38 | 03.01.02.09.04 | 3 días |

| ID | WBS | Task | Duration | Start | Finish | Predecessors | Total slack | Free slack | Cost | Text1 | Text2 |
| --- | --- | --- | --- | --- | --- | --- | --- | --- | --- | --- | --- |
| 333 | 1.4.1.1.2.10 | **SEGURIDAD Y EVACUACION** | 8d | 2025-12-19 | 2025-12-27 |  | 55d |  | 764.52 | 03.01.02.10 | 9 días |
| 334 | 1.4.1.1.2.10.1 | EXTINTOR | 2d | 2025-12-19 | 2025-12-21 | 323 | 55d | 0d | 508.16 | 03.01.02.10.01 | 3 días |
| 335 | 1.4.1.1.2.10.2 | LUCES DE SEGURIDAD | 2d | 2025-12-23 | 2025-12-25 | 324 | 57d |  | 110.56 | 03.01.02.10.02 | 3 días |
| 336 | 1.4.1.1.2.10.3 | SEÑALES FOTOLUMINISCENTES | 6d | 2025-12-21 | 2025-12-27 | 334 | 55d |  | 145.8 | 03.01.02.10.03 | 7 días |
| 337 | 1.4.1.1.3 | **COLUMBARIO** | 93d | 2025-11-19 | 2026-02-20 |  | 0d |  | 68,068.34 | 03.01.03 | 94 días |
| 338 | 1.4.1.1.3.1 | **PISOS Y PAVIMENTOS** | 90d | 2025-11-19 | 2026-02-17 |  | 3d |  | 13,903.24 | 03.01.03.01 | 91 días |
| 339 | 1.4.1.1.3.1.1 | **VEREDAS DE ADOQUIN** | 90d | 2025-11-19 | 2026-02-17 |  | 3d |  | 13,002.43 | 03.01.03.01.01 | 91 días |
| 340 | 1.4.1.1.3.1.1.1 | EXCAVACION A NIVEL DE SUB RASANTE CON EQUIPO EN TERRENO NORMAL EN VEREDAS DE ADOQUIN | 4d | 2025-11-19 | 2025-11-23 | 145FF | 89d | 0d | 2,289.23 | 03.01.03.01.01.01 | 5 días |
| 341 | 1.4.1.1.3.1.1.2 | CONFORMACION Y COMPACTACION DE SUBRASANTE PARA VEREDAS DE ADOQUIN | 1d | 2025-12-27 | 2025-12-28 | 147FF | 50d | 0d | 1,305.97 | 03.01.03.01.01.02 | 2 días |
| 342 | 1.4.1.1.3.1.1.3 | BASE GRANULAR E=0.10 m C/ EQUIPO PARA VEREDAS DE ADOQUIN | 1d | 2025-12-28 | 2025-12-29 | 341 | 53d |  | 2,347.48 | 03.01.03.01.01.03 | 2 días |
| 343 | 1.4.1.1.3.1.1.4 | CAMA DE ARENA h=0.05m PARA ADOQUINADO | 1d | 2026-02-14 | 2026-02-15 | 381 | 0d |  | 912.2 | 03.01.03.01.01.04 | 2 días |
| 344 | 1.4.1.1.3.1.1.5 | ADOQUINADO DE CONCRETO (4x10x20cm) | 2d | 2026-02-15 | 2026-02-17 | 343 | 0d |  | 3,376.17 | 03.01.03.01.01.05 | 3 días |
| 345 | 1.4.1.1.3.1.1.6 | ELIMINACION DE MATERIAL EXCEDENTE C/VOLQ. 15M3, D=10km | 1d | 2026-02-16 | 2026-02-17 | 344FF | 3d |  | 2,771.38 | 03.01.03.01.01.06 | 2 días |
| 346 | 1.4.1.1.3.1.2 | **VEREDAS DE CONCRETO** | 40d | 2025-11-22 | 2026-01-01 |  | 50d |  | 900.81 | 03.01.03.01.02 | 41 días |
| 347 | 1.4.1.1.3.1.2.1 | EXCAVACION A NIVEL DE SUB RASANTE CON EQUIPO EN TERRENO NORMAL EN VEREDAS DE CONCRETO | 1d | 2025-11-22 | 2025-11-23 | 340FF | 89d | 0d | 22.4 | 03.01.03.01.02.01 | 2 días |
| 348 | 1.4.1.1.3.1.2.2 | CONFORMACION Y COMPACTACION DE SUBRASANTE PARA VEREDAS DE CONCRETO | 1d | 2025-12-27 | 2025-12-28 | 341FF | 50d | 0d | 48.76 | 03.01.03.01.02.02 | 2 días |
| 349 | 1.4.1.1.3.1.2.3 | BASE GRANULAR E=0.10 m C/ EQUIPO PARA VEREDAS DE CONCRETO | 1d | 2025-12-28 | 2025-12-29 | 348 | 50d | 0d | 87.65 | 03.01.03.01.02.03 | 2 días |
| 350 | 1.4.1.1.3.1.2.4 | ENCOFRADO Y DESENCOFRADO EN VEREDAS DE CONCRETO | 1d | 2025-12-29 | 2025-12-30 | 349 | 50d | 0d | 499.75 | 03.01.03.01.02.04 | 2 días |
| 351 | 1.4.1.1.3.1.2.5 | CONCRETO PREMEZCLADO fc=175 kg/cm2 EN VEREDAS INCL. BRUÑADO | 1d | 2025-12-30 | 2025-12-31 | 350 | 50d | 0d | 201.23 | 03.01.03.01.02.05 | 2 días |
| 352 | 1.4.1.1.3.1.2.6 | CURADO DE CONCRETO CON ADITIVO CURADOR | 1d | 2025-12-31 | 2026-01-01 | 351 | 50d | 0d | 17.44 | 03.01.03.01.02.06 | 2 días |
| 353 | 1.4.1.1.3.1.2.7 | ELIMINACION DE MATERIAL EXCEDENTE C/VOLQ. 15M3, D=10km | 1d | 2025-12-31 | 2026-01-01 | 352SS | 50d |  | 23.58 | 03.01.03.01.02.07 | 2 días |
| 354 | 1.4.1.1.3.2 | **MURETES DE ALBAÑILERIA** | 10d | 2026-01-19 | 2026-01-29 |  | 0d |  | 7,480.24 | 03.01.03.02 | 11 días |
| 355 | 1.4.1.1.3.2.1 | MURO DE LADRILLO KING KONG H18 | 10d | 2026-01-19 | 2026-01-29 | 163FS-2d | 0d |  | 7,480.24 | 03.01.03.02.01 | 11 días |
| 356 | 1.4.1.1.3.3 | **PINTURA** | 3d | 2026-02-17 | 2026-02-20 |  | 0d |  | 1,522.61 | 03.01.03.03 | 4 días |
| 357 | 1.4.1.1.3.3.1 | **PINTURA EN MURO EXTERIOR DE COLUMBARIOS H=2.60** | 3d | 2026-02-17 | 2026-02-20 |  | 0d |  | 1,216.06 | 03.01.03.03.01 | 4 días |
| 358 | 1.4.1.1.3.3.1.1 | PINTURA LATEX EN MUROS 2 MANOS | 3d | 2026-02-17 | 2026-02-20 | 344 | 0d |  | 1,216.06 | 03.01.03.03.01.01 | 4 días |

| ID | WBS | Task | Duration | Start | Finish | Predecessors | Total slack | Free slack | Cost | Text1 | Text2 |
| --- | --- | --- | --- | --- | --- | --- | --- | --- | --- | --- | --- |
| 359 | 1.4.1.1.3.3.2 | **PINTURA DE RAMPAS** | 1d | 2026-02-17 | 2026-02-18 |  | 2d |  | 255.53 | 03.01.03.03.02 | 2 días |
| 360 | 1.4.1.1.3.3.2.1 | PINTURA ACRILICA ANTIDESLIZANTE AMARILLA | 1d | 2026-02-17 | 2026-02-18 | 358SS | 2d |  | 255.53 | 03.01.03.03.02.01 | 2 días |
| 361 | 1.4.1.1.3.3.3 | **PINTURA DE POSTE DE SEÑALIZACION** | 1d | 2026-02-19 | 2026-02-20 |  | 0d |  | 51.02 | 03.01.03.03.03 | 2 días |
| 362 | 1.4.1.1.3.3.3.1 | REFRACCION, MANTENIMIENTO Y PINTURA EN ACRILICO GRIS | 1d | 2026-02-19 | 2026-02-20 | 366 | 0d |  | 51.02 | 03.01.03.03.03.01 | 2 días |
| 363 | 1.4.1.1.3.4 | **VARIOS** | 92d | 2025-11-20 | 2026-02-20 |  | 0d |  | 4,731.5 | 03.01.03.04 | 93 días |
| 364 | 1.4.1.1.3.4.1 | **REUBICACION DE POSTE DE SEÑALIZACION** | 3d | 2026-02-17 | 2026-02-20 |  | 0d |  | 145.12 | 03.01.03.04.01 | 4 días |
| 365 | 1.4.1.1.3.4.1.1 | EXCAVACION PARA BASE DE CONCRETO 50x50x50CM | 1d | 2026-02-17 | 2026-02-18 | 344 | 0d |  | 3.86 | 03.01.03.04.01.01 | 2 días |
| 366 | 1.4.1.1.3.4.1.2 | DADO BASE DE CONCRETO 50x50x50cm | 1d | 2026-02-18 | 2026-02-19 | 365 | 0d |  | 129.68 | 03.01.03.04.01.02 | 2 días |
| 367 | 1.4.1.1.3.4.1.3 | ELIMINACION DE MATERIAL EXCEDENTE C/VOLQ. 15M3, D=10km | 1d | 2026-02-19 | 2026-02-20 | 366 | 0d |  | 11.58 | 03.01.03.04.01.03 | 2 días |
| 368 | 1.4.1.1.3.4.2 | **DEMOLICION Y CONSTRUCCION DE RED Y BUZON DE AGUA** | 38d | 2025-11-20 | 2025-12-28 |  | 54d |  | 4,220.67 | 03.01.03.04.02 | 39 días |
| 369 | 1.4.1.1.3.4.2.1 | DEMOLICION Y SELLADO DE SALIDA DE BUZON EXISTENTE | 1d | 2025-11-20 | 2025-11-21 | 340FF-2d | 90d | 0d | 117.46 | 03.01.03.04.02.01 | 2 días |
| 370 | 1.4.1.1.3.4.2.2 | EXCAVACION PARA NUEVA TUBERIA Y BUZONES | 1d | 2025-11-21 | 2025-11-22 | 369 | 90d |  | 186.29 | 03.01.03.04.02.02 | 2 días |
| 371 | 1.4.1.1.3.4.2.3 | CONSTRUCCION DE NUEVOS BUZONES DE INSPECCION INC. SALIDA DE AGUA | 1d | 2025-12-27 | 2025-12-28 | 341FF | 54d |  | 210.72 | 03.01.03.04.02.03 | 2 días |
| 372 | 1.4.1.1.3.4.2.4 | RED DE DISTRIBUCION TUBERIA DE 2" PVC | 2d | 2025-11-21 | 2025-11-23 | 347FF | 89d |  | 3,706.2 | 03.01.03.04.02.04 | 3 días |
| 373 | 1.4.1.1.3.4.3 | **SEMBRADO** | 1d | 2026-02-17 | 2026-02-18 |  | 2d |  | 65.49 | 03.01.03.04.03 | 2 días |
| 374 | 1.4.1.1.3.4.3.1 | SEMBRADO DE PLANTA PERENNE | 1d | 2026-02-17 | 2026-02-18 | 344 | 2d |  | 65.49 | 03.01.03.04.03.01 | 2 días |
| 375 | 1.4.1.1.3.4.4 | **LETRERO DE PABELLON** | 1d | 2026-02-15 | 2026-02-16 |  | 4d |  | 300.22 | 03.01.03.04.04 | 2 días |
| 376 | 1.4.1.1.3.4.4.1 | LETRERO DE PABELLON 1.25 X .35 DE ACERO INOXIDABLE DE ACUERDO A | 1d | 2026-02-15 | 2026-02-16 | 380 | 4d |  | 300.22 | 03.01.03.04.04.01 | 2 días |
| 377 | 1.4.1.1.3.5 | **REVOQUES Y REVESTIMIENTOS** | 18d | 2026-01-28 | 2026-02-15 |  | 0d |  | 40,337.7 | 03.01.03.05 | 19 días |
| 378 | 1.4.1.1.3.5.1 | **MURO EXTERIOR E INTERIOR PARA COLUMBARIO** | 18d | 2026-01-28 | 2026-02-15 |  | 0d |  | 40,337.7 | 03.01.03.05.01 | 19 días |
| 379 | 1.4.1.1.3.5.1.1 | PREPARACION DE SUPERFICIE | 2d | 2026-01-28 | 2026-01-30 | 355FS-1d | 0d |  | 1,575.22 | 03.01.03.05.01.01 | 3 días |
| 380 | 1.4.1.1.3.5.1.2 | ACABADO DE CEMENTO PULIDO | 1d | 2026-02-14 | 2026-02-15 | 381 | 4d | 0d | 1,163.46 | 03.01.03.05.01.02 | 2 días |
| 381 | 1.4.1.1.3.5.1.3 | TARRAJEO EN MUROS | 15d | 2026-01-30 | 2026-02-14 | 379 | 0d |  | 37,599.02 | 03.01.03.05.01.03 | 16 días |
| 382 | 1.4.1.1.3.6 | **LIMPIEZA FINAL** | 1d | 2026-02-19 | 2026-02-20 |  | 0d |  | 93.05 | 03.01.03.06 | 2 días |
| 383 | 1.4.1.1.3.6.1 | LIMPIEZA FINAL DE OBRA | 1d | 2026-02-19 | 2026-02-20 | 358FF | 0d |  | 93.05 | 03.01.03.06.01 | 2 días |

| ID | WBS | Task | Duration | Start | Finish | Predecessors | Total slack | Free slack | Cost | Text2 | Text1 |
| --- | --- | --- | --- | --- | --- | --- | --- | --- | --- | --- | --- |
| 384 | 1.5 | **INSTALACIONES SANITARIAS** | 102d | 2025-11-10 | 2026-02-20 |  | 0d |  | 29,037.32 | 103 días |  |
| 385 | 1.5.1 | **INSTALACIONES SANITARIAS** | 102d | 2025-11-10 | 2026-02-20 |  | 0d |  | 29,037.32 | 103 días | 04 |
| 386 | 1.5.1.1 | **CREMATORIO** | 73d | 2025-12-09 | 2026-02-20 |  | 0d |  | 25,923.09 | 74 días | 04.01 |
| 387 | 1.5.1.1.1 | **SISTEMA DE DESAGUE** | 31d | 2025-12-09 | 2026-01-09 |  | 7d |  | 12,006.13 | 32 días | 04.01.01 |
| 388 | 1.5.1.1.1.1 | **SALIDAS** | 3d | 2025-12-09 | 2025-12-12 |  | 7d |  | 2,490.67 | 4 días | 04.01.01.01 |
| 389 | 1.5.1.1.1.1.1 | SALIDAS DE DESAGUE PVC ø 2" | 1d | 2025-12-09 | 2025-12-10 | 68 | 7d | 0d | 858.72 | 2 días | 04.01.01.01.01 |
| 390 | 1.5.1.1.1.1.2 | SALIDAS DE DESAGUE PVC ø 4" | 1d | 2025-12-10 | 2025-12-11 | 389 | 7d | 0d | 832 | 2 días | 04.01.01.01.02 |
| 391 | 1.5.1.1.1.1.3 | SALIDAS DE TUBERIA DE VENTILACION PVC ø 2" | 1d | 2025-12-11 | 2025-12-12 | 390 | 7d | 0d | 799.95 | 2 días | 04.01.01.01.03 |
| 392 | 1.5.1.1.1.2 | **REDES DE DERIVACION** | 13d | 2025-12-12 | 2025-12-25 |  | 7d |  | 6,453.29 | 14 días | 04.01.01.02 |
| 393 | 1.5.1.1.1.2.1 | SUM. E INST. DE PVC CP C-10 SP DE 2" PARA REDES DE DERIVACION | 1d | 2025-12-12 | 2025-12-13 | 391 | 7d | 0d | 176.7 | 2 días | 04.01.01.02.01 |
| 394 | 1.5.1.1.1.2.2 | SUM. E INST. PVC CP C-10 SP DE 4" PARA REDES DE DERIVACION | 2d | 2025-12-13 | 2025-12-15 | 393 | 7d | 0d | 1,106.86 | 3 días | 04.01.01.02.02 |
| 395 | 1.5.1.1.1.2.3 | SUM. E INST. PVC CP C-10 SP DE 4" PARA CONECCIONES ENTRE CAJAS | 5d | 2025-12-15 | 2025-12-20 | 394 | 7d | 0d | 3,126.95 | 6 días | 04.01.01.02.03 |
| 396 | 1.5.1.1.1.2.4 | SUM. E INST. PVC CP C-10 SP DE 1" DESDE CAMARA DE BOMBEO DE DESAGUE HASTA CAJA DE DESAGUE EXISTENTE | 5d | 2025-12-20 | 2025-12-25 | 395 | 7d | 0d | 2,042.78 | 6 días | 04.01.01.02.04 |
| 397 | 1.5.1.1.1.3 | **REDES COLECTORAS** | 1d | 2026-01-04 | 2026-01-05 |  | 7d |  | 270.62 | 2 días | 04.01.01.03 |
| 398 | 1.5.1.1.1.3.1 | SUM. E INST. DE TUBERIA PVC SAL SP DE ø2" PARA TUBERIAS DE VENTILACION | 1d | 2026-01-04 | 2026-01-05 | 396FS+10d | 7d | 0d | 270.62 | 2 días | 04.01.01.03.01 |
| 399 | 1.5.1.1.1.4 | **ACCESORIOS DE REDES DE DERIVACION** | 2d | 2026-01-05 | 2026-01-07 |  | 7d |  | 1,118.62 | 3 días | 04.01.01.04 |
| 400 | 1.5.1.1.1.4.1 | SUM. E INST. DE CODO DE 90° PARA TUBERIA DE VENTILACION PVC-SAP C-10SP DE 2" | 1d | 2026-01-05 | 2026-01-06 | 398 | 7d | 0d | 86.5 | 2 días | 04.01.01.04.01 |
| 401 | 1.5.1.1.1.4.2 | SUM. E INST. DE TEE PARA TUBERIA DE VENTILACION PVC-SAP C-10SP DE 2" | 1d | 2026-01-05 | 2026-01-06 | 400SS | 7d | 0d | 43.25 | 2 días | 04.01.01.04.02 |
| 402 | 1.5.1.1.1.4.3 | SUM. E INST. DE CODO DE 45° PVC-SAP C-10 SP DE 4" | 1d | 2026-01-05 | 2026-01-06 | 401SS | 7d | 0d | 182.88 | 2 días | 04.01.01.04.03 |
| 403 | 1.5.1.1.1.4.4 | SUM. E INST. DE YEE CON REDUCCION DE 4" A 2" DE PVC-SAP C-10SP | 1d | 2026-01-05 | 2026-01-06 | 402SS | 7d | 0d | 107.92 | 2 días | 04.01.01.04.04 |
| 404 | 1.5.1.1.1.4.5 | SUM. E INST. DE YEE 4" DE PVC-SAP C-10 SP | 1d | 2026-01-05 | 2026-01-06 | 403SS | 7d | 0d | 116.19 | 2 días | 04.01.01.04.05 |
| 405 | 1.5.1.1.1.4.6 | SUM. E INST. DE SUMIDERO DE BRONCE DE 2" | 1d | 2026-01-05 | 2026-01-06 | 404SS | 7d | 0d | 37.14 | 2 días | 04.01.01.04.06 |
| 406 | 1.5.1.1.1.4.7 | SUM. E INST. DE CODO DE 45° PVC-SAP C-10 SP DE 1" | 2d | 2026-01-05 | 2026-01-07 | 405SS | 7d | 0d | 544.74 | 3 días | 04.01.01.04.07 |
| 407 | 1.5.1.1.1.5 | **CAJAS DE DESAGUE** | 2d | 2026-01-07 | 2026-01-09 |  | 7d |  | 1,672.93 | 3 días | 04.01.01.05 |
| 408 | 1.5.1.1.1.5.1 | SUM. E INST. DE CAJA DE REGISTRO DE DESAGUE (0.30 X 0.60m) | 2d | 2026-01-07 | 2026-01-09 | 406 | 7d | 0d | 1,672.93 | 3 días | 04.01.01.05.01 |

| ID | WBS | Task | Duration | Start | Finish | Predecessors | Total slack | Free slack | Cost | Text1 | Text2 |
| --- | --- | --- | --- | --- | --- | --- | --- | --- | --- | --- | --- |
| 409 | 1.5.1.1.2 | **SISTEMA DE AGUA FRIA** | 17d | 2026-01-09 | 2026-01-26 |  | 7d |  | 9,313.61 | 04.01.02 | 18 días |
| 410 | 1.5.1.1.2.1 | **SALIDAS** | 3d | 2026-01-09 | 2026-01-12 |  | 7d |  | 1,138.5 | 04.01.02.01 | 4 días |
| 411 | 1.5.1.1.2.1.1 | SALIDA DE AGUA FRIA CON TUBERIA DE PVC-SAP 1/2" | 1d | 2026-01-09 | 2026-01-10 | 408 | 7d | 0d | 448.08 | 04.01.02.01.01 | 2 días |
| 412 | 1.5.1.1.2.1.2 | SALIDA DE AGUA FRIA CON TUBERIA DE PVC-SAP 1 1/4" | 1d | 2026-01-10 | 2026-01-11 | 411 | 7d | 0d | 338.96 | 04.01.02.01.02 | 2 días |
| 413 | 1.5.1.1.2.1.3 | SALIDA DE AGUA FRIA CON TUBERIA DE PVC-SAP 1 1/2" | 1d | 2026-01-11 | 2026-01-12 | 412 | 7d | 0d | 351.46 | 04.01.02.01.03 | 2 días |
| 414 | 1.5.1.1.2.2 | **RAMALES DE DISTRIBUCION** | 7d | 2026-01-12 | 2026-01-19 |  | 7d |  | 7,023.89 | 04.01.02.02 | 8 días |
| 415 | 1.5.1.1.2.2.1 | SUM. E INST. DE TUBERIA DE PVC-SAP C-10 TR DE 1/2" | 1d | 2026-01-12 | 2026-01-13 | 413 | 7d | 0d | 280.89 | 04.01.02.02.01 | 2 días |
| 416 | 1.5.1.1.2.2.2 | SUM. E INST. DE TUBERIA DE PVC-SAP C-10 TR DE 1 1/4" | 6d | 2026-01-12 | 2026-01-18 | 415SS | 7d | 0d | 5,109.98 | 04.01.02.02.02 | 7 días |
| 417 | 1.5.1.1.2.2.3 | SUM. E INST. DE TUBERIA DE PVC-SAP C-10 TR DE 1 1/2" | 1d | 2026-01-18 | 2026-01-19 | 416 | 7d | 0d | 1,633.02 | 04.01.02.02.03 | 2 días |
| 418 | 1.5.1.1.2.3 | **ACCESORIOS** | 2d | 2026-01-19 | 2026-01-21 |  | 7d |  | 874.98 | 04.01.02.03 | 3 días |
| 419 | 1.5.1.1.2.3.1 | SUM. E INST. DE CODO DE 90° PVC-SAP CR DE 1/2" | 1d | 2026-01-19 | 2026-01-20 | 417 | 7d | 0d | 176.46 | 04.01.02.03.01 | 2 días |
| 420 | 1.5.1.1.2.3.2 | SUM. E INST. DE CODO DE 90° PVC-SAP CR DE 1 1/4" | 1d | 2026-01-20 | 2026-01-21 | 419 | 7d | 0d | 121.38 | 04.01.02.03.02 | 2 días |
| 421 | 1.5.1.1.2.3.3 | SUM. E INST. DE CODO DE 90° PVC-SAP CR DE 1 1/2" | 1d | 2026-01-20 | 2026-01-21 | 420SS | 7d | 0d | 298.62 | 04.01.02.03.03 | 2 días |
| 422 | 1.5.1.1.2.3.4 | SUM. E INST. DE TEE DE PVC-SAP CR DE 1 1/4" | 1d | 2026-01-20 | 2026-01-21 | 421SS | 7d | 0d | 133.38 | 04.01.02.03.04 | 2 días |
| 423 | 1.5.1.1.2.3.5 | SUM. E INST. DE ACCESORIO REDUCCION DE 1 1/2" A 1/2" | 1d | 2026-01-20 | 2026-01-21 | 422SS | 7d | 0d | 38.28 | 04.01.02.03.05 | 2 días |
| 424 | 1.5.1.1.2.3.6 | SUM. E INST. DE ACCESORIO REDUCCION DE 1 1/2" A 1 1/4" | 1d | 2026-01-20 | 2026-01-21 | 423SS | 7d | 0d | 106.86 | 04.01.02.03.06 | 2 días |
| 425 | 1.5.1.1.2.4 | **VALVULAS** | 1d | 2026-01-25 | 2026-01-26 |  | 7d |  | 276.24 | 04.01.02.04 | 2 días |
| 426 | 1.5.1.1.2.4.1 | SUM. E INST. DE VALVULA DE PASO DE BRONCE DE 1 1/4", INCL. ACCESORIOS | 1d | 2026-01-25 | 2026-01-26 | 424FS+4d | 7d |  | 276.24 | 04.01.02.04.01 | 2 días |
| 427 | 1.5.1.1.3 | **APARATOS SANITARIOS Y ACCESORIOS** | 2d | 2026-02-17 | 2026-02-19 |  | 0d |  | 4,133.49 | 04.01.03 | 3 días |
| 428 | 1.5.1.1.3.1 | **APARATOS SANITARIOS DE SS.HH** | 2d | 2026-02-17 | 2026-02-19 |  | 0d |  | 4,133.49 | 04.01.03.01 | 3 días |
| 429 | 1.5.1.1.3.1.1 | SUM. E INST. DE INODORO DE LOZA BLANCA PARA SS.HH | 1d | 2026-02-17 | 2026-02-18 | 426FS+15d, 203 | 0d |  | 1,695.96 | 04.01.03.01.01 | 2 días |
| 430 | 1.5.1.1.3.1.2 | SUM. E INST. DE LAVATORIO DE LOZA BLANCA PARA SS.HH DENTRO | 1d | 2026-02-17 | 2026-02-18 | 429SS | 0d |  | 758.14 | 04.01.03.01.02 | 2 días |
| 431 | 1.5.1.1.3.1.3 | SUM. E INST. DE URINARIO DE LOZA BLANCA PARA SS.HH DE VARONES | 1d | 2026-02-18 | 2026-02-19 | 430 | 0d |  | 371.09 | 04.01.03.01.03 | 2 días |
| 432 | 1.5.1.1.3.1.4 | SUM. E INST. DE GRIFERIA TEMPORIZADA PARA URINARIOS | 1d | 2026-02-18 | 2026-02-19 | 431SS | 0d |  | 379.07 | 04.01.03.01.04 | 2 días |
| 433 | 1.5.1.1.3.1.5 | SUM. E INST. DE GRIFERIA TEMPORIZADA PARA LAVATORIO | 1d | 2026-02-18 | 2026-02-19 | 432SS | 0d |  | 329.19 | 04.01.03.01.05 | 2 días |
| 434 | 1.5.1.1.3.1.6 | SUM. DE PAPELERA DE PLASTICO | 1d | 2026-02-18 | 2026-02-19 | 433SS | 0d |  | 28.18 | 04.01.03.01.06 | 2 días |
| 435 | 1.5.1.1.3.1.7 | SUM. E INST. DE ACCESORIOS SANITARIAS | 1d | 2026-02-18 | 2026-02-19 | 434SS | 0d |  | 571.86 | 04.01.03.01.07 | 2 días |

| ID | WBS | Task | Duration | Start | Finish | Predecessors | Total slack | Free slack | Cost | Text1 | Text2 |
| --- | --- | --- | --- | --- | --- | --- | --- | --- | --- | --- | --- |
| 436 | 1.5.1.1.4 | **VARIOS** | 1d | 2026-02-19 | 2026-02-20 |  | 0d |  | 469.86 | 04.01.04 | 2 días |
| 437 | 1.5.1.1.4.1 | PRUEBA HIDRAULICA DE RED DE DESAGUE | 1d | 2026-02-19 | 2026-02-20 | 435 | 0d |  | 340.15 | 04.01.04.01 | 2 días |
| 438 | 1.5.1.1.4.2 | PRUEBA HIDRAULICA DE RED DE AGUA | 1d | 2026-02-19 | 2026-02-20 | 437SS | 0d |  | 8.95 | 04.01.04.02 | 2 días |
| 439 | 1.5.1.1.4.3 | CAJA DE REBOSE DE CISTERNA 0.40M X 0.40M (INC. REJILLA Y SUMIDERO) | 1d | 2026-02-19 | 2026-02-20 | 437SS | 0d |  | 120.76 | 04.01.04.03 | 2 días |
| 440 | 1.5.1.2 | **VELATORIO** | 39d | 2025-11-10 | 2025-12-19 |  | 63d |  | 3,114.23 | 04.02 | 40 días |
| 441 | 1.5.1.2.1 | **APARATOS SANITARIOS Y ACCESORIOS** | 4d | 2025-11-10 | 2025-11-14 |  | 63d |  | 587.5 | 04.02.01 | 5 días |
| 442 | 1.5.1.2.1.1 | SUMINISTRO DE APARATOS SANITARIOS | 1d | 2025-11-10 | 2025-11-11 | 131SS | 63d | 0d | 372.92 | 04.02.01.01 | 2 días |
| 443 | 1.5.1.2.1.2 | SUMINISTRO DE ACCESORIOS | 1d | 2025-11-12 | 2025-11-13 | 444 | 63d | 0d | 82.14 | 04.02.01.02 | 2 días |
| 444 | 1.5.1.2.1.3 | INSTALACION DE APARATOS SANITARIOS | 1d | 2025-11-11 | 2025-11-12 | 442 | 63d | 0d | 110.36 | 04.02.01.03 | 2 días |
| 445 | 1.5.1.2.1.4 | INSTALACION DE ACCESORIOS | 1d | 2025-11-13 | 2025-11-14 | 443 | 63d | 0d | 22.08 | 04.02.01.04 | 2 días |
| 446 | 1.5.1.2.2 | **SISTEMA DE AGUA FRIA** | 6d | 2025-11-22 | 2025-11-28 |  | 63d |  | 980.79 | 04.02.02 | 7 días |
| 447 | 1.5.1.2.2.1 | SALIDA DE AGUA FRIA | 1d | 2025-11-22 | 2025-11-23 | 445FS+8d | 63d | 0d | 112.02 | 04.02.02.01 | 2 días |
| 448 | 1.5.1.2.2.2 | REDES DE ALIMENTACION | 1d | 2025-11-23 | 2025-11-24 | 447 | 63d | 0d | 186.79 | 04.02.02.02 | 2 días |
| 449 | 1.5.1.2.2.3 | ACCESORIOS DE REDES DE AGUA | 2d | 2025-11-24 | 2025-11-26 | 448 | 63d | 0d | 604.72 | 04.02.02.03 | 3 días |
| 450 | 1.5.1.2.2.4 | VALVULAS | 1d | 2025-11-26 | 2025-11-27 | 449 | 63d | 0d | 39.47 | 04.02.02.04 | 2 días |
| 451 | 1.5.1.2.2.5 | CONEXION CON RED DE AGUA EXISTENTE | 1d | 2025-11-27 | 2025-11-28 | 450 | 63d | 0d | 37.79 | 04.02.02.05 | 2 días |
| 452 | 1.5.1.2.3 | **DESAGUE Y VENTILACION** | 11d | 2025-12-08 | 2025-12-19 |  | 63d |  | 1,545.94 | 04.02.03 | 12 días |
| 453 | 1.5.1.2.3.1 | SALIDA DE DESAGUE | 1d | 2025-12-08 | 2025-12-09 | 451FS+10d | 63d | 0d | 146.29 | 04.02.03.01 | 2 días |
| 454 | 1.5.1.2.3.2 | SALIDA DE DRENAJE PLUVIAL | 1d | 2025-12-09 | 2025-12-10 | 453 | 63d | 0d | 67.74 | 04.02.03.02 | 2 días |
| 455 | 1.5.1.2.3.3 | EXCAVACION PARA CANALETAS Y REDES | 1d | 2025-12-10 | 2025-12-11 | 454 | 63d | 0d | 9.07 | 04.02.03.03 | 2 días |
| 456 | 1.5.1.2.3.4 | CANALETAS, INC, REJILLA METALICA Y TRAMPA DE CONEXION A DESAGUE | 1d | 2025-12-11 | 2025-12-12 | 455 | 63d | 0d | 987.57 | 04.02.03.04 | 2 días |
| 457 | 1.5.1.2.3.5 | REDES DE DERIVACION | 1d | 2025-12-12 | 2025-12-13 | 456 | 63d | 0d | 114.31 | 04.02.03.05 | 2 días |
| 458 | 1.5.1.2.3.6 | REDES COLECTORAS | 1d | 2025-12-13 | 2025-12-14 | 457 | 63d | 0d | 84.73 | 04.02.03.06 | 2 días |
| 459 | 1.5.1.2.3.7 | ACCESORIOS DE REDES COLECTORAS | 3d | 2025-12-14 | 2025-12-17 | 458 | 63d | 0d | 94.05 | 04.02.03.07 | 4 días |
| 460 | 1.5.1.2.3.8 | REUBICACION DE CAJA DE CONCRETO | 1d | 2025-12-17 | 2025-12-18 | 459 | 63d | 0d | 37.79 | 04.02.03.08 | 2 días |
| 461 | 1.5.1.2.3.9 | ELIMINACION MATERIAL EXCEDENTE | 1d | 2025-12-18 | 2025-12-19 | 460 | 63d |  | 4.39 | 04.02.03.09 | 2 días |

| ID | WBS | Task | Duration | Start | Finish | Predecessors | Total slack | Free slack | Cost | Text2 | Text1 |
| --- | --- | --- | --- | --- | --- | --- | --- | --- | --- | --- | --- |
| 462 | 1.6 | **INSTALACIONES ELECTRICAS** | 102d | 2025-11-10 | 2026-02-20 |  | 0d |  | 44,777.75 | 103 días |  |
| 463 | 1.6.1 | **INSTALACIONES ELECTRICAS** | 102d | 2025-11-10 | 2026-02-20 |  | 0d |  | 44,777.75 | 103 días | 05 |
| 464 | 1.6.1.1 | **CREMATORIO** | 83d | 2025-11-29 | 2026-02-20 |  | 0d |  | 37,310.21 | 84 días | 05.01 |
| 465 | 1.6.1.1.1 | **CAJAS DE PASE** | 3d | 2025-11-29 | 2025-12-02 |  | 50d |  | 332.25 | 4 días | 05.01.01 |
| 466 | 1.6.1.1.1.1 | CAJA DE PASE DE PLANCHA GALVANIZADA DE 10cm x 10cm x 8cm (SELLADO HERMETICAMENTE), CON PROTECCION IP 65 Y DE TIPO PESADA PARA EMPOTRAR (TIPO 1) | 1d | 2025-11-29 | 2025-11-30 | 77 | 50d | 0d | 102.4 | 2 días | 05.01.01.01 |
| 467 | 1.6.1.1.1.2 | CAJA DE PASE DE PLANCHA GALVANIZADA DE 15cm x 15cm x 8cm (SELLADO HERMETICAMENTE), CON PROTECCION IP 65 Y DE TIPO PESADA PARA EMPOTRAR (TIPO 2) | 1d | 2025-11-30 | 2025-12-01 | 466 | 50d | 0d | 162.03 | 2 días | 05.01.01.02 |
| 468 | 1.6.1.1.1.3 | CAJAS DE PASE PVC DE 30cmx 30cm x 15cm (SELLADO HERMETICAMENTE) | 1d | 2025-12-01 | 2025-12-02 | 467 | 50d | 0d | 67.82 | 2 días | 05.01.01.03 |
| 469 | 1.6.1.1.2 | **SALIDAS Y FUERZAS** | 8d | 2025-12-02 | 2025-12-10 |  | 50d |  | 3,534.68 | 9 días | 05.01.02 |
| 470 | 1.6.1.1.2.1 | **SALIDAS ELECTRICAS DE ALUMBRADO** | 1d | 2025-12-02 | 2025-12-03 |  | 50d |  | 2,293.11 | 2 días | 05.01.02.01 |
| 471 | 1.6.1.1.2.1.1 | SALIDAS PARA LUMINARIAS DE 20W, 220vac | 1d | 2025-12-02 | 2025-12-03 | 468 | 50d | 0d | 2,293.11 | 2 días | 05.01.02.01.01 |
| 472 | 1.6.1.1.2.2 | **SALIDAS ELECTRICAS DE TOMA CORRIENTES** | 1d | 2025-12-03 | 2025-12-04 |  | 50d |  | 685.85 | 2 días | 05.01.02.02 |
| 473 | 1.6.1.1.2.2.1 | SALIDAS PARA TOMACORRIENTE, DOBLE TOMA UNIVERSAL Y PUESTA A TIERRA | 1d | 2025-12-03 | 2025-12-04 | 471 | 50d | 0d | 287.05 | 2 días | 05.01.02.02.01 |
| 474 | 1.6.1.1.2.2.2 | SALIDAS PARA TOMACORRIENTE DE AIRE ACONDICIONADO | 1d | 2025-12-03 | 2025-12-04 | 473SS | 50d | 0d | 159.52 | 2 días | 05.01.02.02.02 |
| 475 | 1.6.1.1.2.2.3 | SALIDAS PARA TOMACORRIENTE TRIFASICO INDUSTRIAL CON PUESTA A TIERRA | 1d | 2025-12-03 | 2025-12-04 | 474SS | 50d | 0d | 239.28 | 2 días | 05.01.02.02.03 |
| 476 | 1.6.1.1.2.3 | **SALIDAS ELECTRICAS PARA INTERRUPTOR** | 1d | 2025-12-09 | 2025-12-10 |  | 50d |  | 356 | 2 días | 05.01.02.03 |
| 477 | 1.6.1.1.2.3.1 | SALIDA ELECTRICA PARA INTERRUPTOR SIMPLE | 1d | 2025-12-09 | 2025-12-10 | 475FS+5d | 50d | 0d | 174.4 | 2 días | 05.01.02.03.01 |
| 478 | 1.6.1.1.2.3.2 | SALIDA ELECTRICA PARA INTERRUPTOR DOBLE | 1d | 2025-12-09 | 2025-12-10 | 477SS | 50d | 0d | 181.6 | 2 días | 05.01.02.03.02 |
| 479 | 1.6.1.1.2.4 | **SALIDAS PARA FUERZAS** | 1d | 2025-12-09 | 2025-12-10 |  | 50d |  | 199.72 | 2 días | 05.01.02.04 |
| 480 | 1.6.1.1.2.4.1 | SALIDA DE FUERZA PARA ELECTROBOMBA 2HP | 1d | 2025-12-09 | 2025-12-10 | 478SS | 50d | 0d | 99.86 | 2 días | 05.01.02.04.01 |
| 481 | 1.6.1.1.2.4.2 | SALIDA DE FUERZA UNIDA DE CONDENSACION MULTISPLIT 12000 BTUh | 1d | 2025-12-09 | 2025-12-10 | 480SS | 50d | 0d | 99.86 | 2 días | 05.01.02.04.02 |
| 482 | 1.6.1.1.3 | **SALIDAS PARA COMUNICACIONES** | 1d | 2025-12-10 | 2025-12-11 |  | 50d |  | 626.46 | 2 días | 05.01.03 |
| 483 | 1.6.1.1.3.1 | SALIDA DE CONECTOR SIMPLE RJ45 CAT 6A | 1d | 2025-12-10 | 2025-12-11 | 481 | 50d | 0d | 91.16 | 2 días | 05.01.03.01 |
| 484 | 1.6.1.1.3.2 | SALIDA PARA ROUTER / ACCESS POINT | 1d | 2025-12-10 | 2025-12-11 | 483SS | 50d | 0d | 53.53 | 2 días | 05.01.03.02 |
| 485 | 1.6.1.1.3.3 | SALIDA PARA TELEVISION | 1d | 2025-12-10 | 2025-12-11 | 484SS | 50d | 0d | 53.53 | 2 días | 05.01.03.03 |
| 486 | 1.6.1.1.3.4 | SALIDA PARA TELEFONO | 1d | 2025-12-10 | 2025-12-11 | 485SS | 50d | 0d | 160.59 | 2 días | 05.01.03.04 |
| 487 | 1.6.1.1.3.5 | SALIDA PARA SENSOR DE DETECCION DE HUMO | 1d | 2025-12-10 | 2025-12-11 | 486SS | 50d | 0d | 214.12 | 2 días | 05.01.03.05 |
| 488 | 1.6.1.1.3.6 | SALIDA PARA SISTEMA DE ALARMA SONORA | 1d | 2025-12-10 | 2025-12-11 | 487SS | 50d | 0d | 53.53 | 2 días | 05.01.03.06 |

| ID | WBS | Task | Duration | Start | Finish | Predecessors | Total slack | Free slack | Cost | Text1 | Text2 |
| --- | --- | --- | --- | --- | --- | --- | --- | --- | --- | --- | --- |
| 489 | 1.6.1.1.4 | **CANALIZACIONES, CONDUCTOS Y TUBERIAS** | 20d | 2025-12-03 | 2025-12-23 |  | 59d |  | 2,157.66 | 05.01.04 | 21 días |
| 490 | 1.6.1.1.4.1 | **CANALIZADORES DE TUBERIA DE PVC** | 20d | 2025-12-03 | 2025-12-23 |  | 59d |  | 2,157.66 | 05.01.04.01 | 21 días |
| 491 | 1.6.1.1.4.1.1 | CANALIZADOR DE TUBERIA PVC-SELL DE 20mm EN INSTALACIONES Y COMUNICACIONES | 2d | 2025-12-20 | 2025-12-22 | 488FS+9d | 50d | 0d | 1,021 | 05.01.04.01.01 | 3 días |
| 492 | 1.6.1.1.4.1.2 | CANALIZADOR DE TUBERIA PVC-SELL DE 25mm EN TOMACORRIENTES EMPOTRADAS EN EL PISO | 1d | 2025-12-03 | 2025-12-04 | 70 | 78d |  | 751.16 | 05.01.04.01.02 | 2 días |
| 493 | 1.6.1.1.4.1.3 | CANALIZADOR DE TUBERIA PVC-SELL DE 35mm EN INSTALACIONES Y COMUNICACIONES | 1d | 2025-12-22 | 2025-12-23 | 491 | 50d | 0d | 385.5 | 05.01.04.01.03 | 2 días |
| 494 | 1.6.1.1.5 | **CONDUCTORES Y CABLES DE ENERGIA** | 8d | 2025-12-23 | 2025-12-31 |  | 50d |  | 6,139.09 | 05.01.05 | 9 días |
| 495 | 1.6.1.1.5.1 | SUM. E INST. DE CONDUCTOR ELECTRICO DE 2x2.5mm2 TW + 1x2.5mm2 TW (C-01) | 3d | 2025-12-23 | 2025-12-26 | 493 | 50d | 0d | 980.69 | 05.01.05.01 | 4 días |
| 496 | 1.6.1.1.5.2 | SUM. E INST. DE CONDUCTOR ELECTRICO DE 2x2.5mm2 TW + 1x2.5mm2 TW (C-02) | 2d | 2025-12-23 | 2025-12-25 | 495SS | 50d | 0d | 888.13 | 05.01.05.02 | 3 días |
| 497 | 1.6.1.1.5.3 | SUM. E INST. DE CONDUCTOR ELECTRICO DE 2x4mm2 TW + 1x4mm2 TW (C-03) | 2d | 2025-12-23 | 2025-12-25 | 496SS | 50d | 0d | 810.26 | 05.01.05.03 | 3 días |
| 498 | 1.6.1.1.5.4 | SUM. E INST. DE CONDUCTOR ELECTRICO DE 3x6mm2 N2XOH + 1x6mm2 N2XOH (C-04) | 1d | 2025-12-25 | 2025-12-26 | 497 | 50d | 0d | 477.95 | 05.01.05.04 | 2 días |
| 499 | 1.6.1.1.5.5 | SUM. E INST. DE CONDUCTOR ELECTRICO DE 3x4mm2 N2XOH+ 1x4mm2 N2XOH (C-05) | 1d | 2025-12-26 | 2025-12-27 | 498 | 50d | 0d | 288.73 | 05.01.05.05 | 2 días |
| 500 | 1.6.1.1.5.6 | SUM. E INST. DE CONDUCTOR ELECTRICO DE 3x4mm2 N2XOH + 1x4mm2 N2XOH (C-06) | 1d | 2025-12-27 | 2025-12-28 | 499 | 50d | 0d | 668.74 | 05.01.05.06 | 2 días |
| 501 | 1.6.1.1.5.7 | SUM. E INST. DE CONDUCTOR ELECTRICO DE 3x4mm2 N2XOH + 1x4mm2 N2XOH (C-07) | 2d | 2025-12-28 | 2025-12-30 | 500 | 50d | 0d | 741.12 | 05.01.05.07 | 3 días |
| 502 | 1.6.1.1.5.8 | SUM. E INST. DE CONDUCTOR ELECTRICO DE 3x6mm2 N2XOH + 1x6mm2 N2XOH (C-08) | 1d | 2025-12-28 | 2025-12-29 | 501SS | 50d | 0d | 364.24 | 05.01.05.08 | 2 días |
| 503 | 1.6.1.1.5.9 | SUM. E INST. DE CONDUCTOR ELECTRICO DE 3x4mm2 N2XOH + 1x4mm2 N2XOH (C-09) | 2d | 2025-12-29 | 2025-12-31 | 502 | 50d | 0d | 919.23 | 05.01.05.09 | 3 días |
| 504 | 1.6.1.1.6 | **SUM. E INST. DE EQUIPOS Y PLACAS DE TOMA CORRIENTRE** | 9d | 2026-02-11 | 2026-02-20 |  | 0d |  | 3,751.3 | 05.01.06 | 10 días |
| 505 | 1.6.1.1.6.1 | **SUM E INST. DE EQUIPOS DE ALUMBRADO** | 5d | 2026-02-15 | 2026-02-20 |  | 0d |  | 2,237.86 | 05.01.06.01 | 6 días |
| 506 | 1.6.1.1.6.1.1 | ALUMBRADO DE 18W TIPO LED (DICROICO) | 4d | 2026-02-15 | 2026-02-19 | 514 | 0d |  | 1,794.96 | 05.01.06.01.01 | 5 días |
| 507 | 1.6.1.1.6.1.2 | ALUMBRADO DE BRAQUETE ADOSADO 20W | 1d | 2026-02-19 | 2026-02-20 | 506 | 0d |  | 442.9 | 05.01.06.01.02 | 2 días |
| 508 | 1.6.1.1.6.2 | **SUM E INST. DE PLACA DE TOMA CORRIENTE** | 2d | 2026-02-11 | 2026-02-13 |  | 0d |  | 1,135.68 | 05.01.06.02 | 3 días |
| 509 | 1.6.1.1.6.2.1 | TOMA CORRIENTE DOBLE | 1d | 2026-02-11 | 2026-02-12 | 239 | 0d |  | 166.86 | 05.01.06.02.01 | 2 días |
| 510 | 1.6.1.1.6.2.2 | TOMA CORRIENTE DOBLE EN PISO | 1d | 2026-02-12 | 2026-02-13 | 509 | 0d |  | 111.24 | 05.01.06.02.02 | 2 días |
| 511 | 1.6.1.1.6.2.3 | TOMA CORRIENTE TRIFASICO INDUSTRIAL CON PUESTA A TIERRA | 1d | 2026-02-12 | 2026-02-13 | 510SS | 0d |  | 857.58 | 05.01.06.02.03 | 2 días |
| 512 | 1.6.1.1.6.3 | **SUM E INST. DE INTERRUPTORES** | 2d | 2026-02-13 | 2026-02-15 |  | 0d |  | 377.76 | 05.01.06.03 | 3 días |
| 513 | 1.6.1.1.6.3.1 | INTERRUPTOR SIMPLE | 1d | 2026-02-13 | 2026-02-14 | 511 | 0d |  | 188.88 | 05.01.06.03.01 | 2 días |
| 514 | 1.6.1.1.6.3.2 | INTERRUPTOR DOBLE | 1d | 2026-02-14 | 2026-02-15 | 513 | 0d |  | 188.88 | 05.01.06.03.02 | 2 días |

| ID | WBS | Task | Duration | Start | Finish | Predecessors | Total slack | Free slack | Cost | Text1 | Text2 |
| --- | --- | --- | --- | --- | --- | --- | --- | --- | --- | --- | --- |
| 515 | 1.6.1.1.7 | **TABLEROS ELECTRICOS** | 8d | 2026-02-11 | 2026-02-19 |  | 1d |  | 6,482.07 | 05.01.07 | 9 días |
| 516 | 1.6.1.1.7.1 | SUM. E INST. DE TABLERO GENERAL DE DISTRIBUCION 220 VAC -3Ø-60Hz | 2d | 2026-02-11 | 2026-02-13 | 239 | 1d | 0d | 2,362.79 | 05.01.07.01 | 3 días |
| 517 | 1.6.1.1.7.2 | SUM. E INST. DE TABLERO DE DISTRIBUCION (TD-01) 220 VAC-3Ø-60Hz | 2d | 2026-02-13 | 2026-02-15 | 516 | 1d | 0d | 1,148.84 | 05.01.07.02 | 3 días |
| 518 | 1.6.1.1.7.3 | SUM. E INST. DE TABLERO DE DISTRIBUCION (TD-02) 220 VAC-3Ø-60Hz | 2d | 2026-02-15 | 2026-02-17 | 517 | 1d | 0d | 1,107.76 | 05.01.07.03 | 3 días |
| 519 | 1.6.1.1.7.4 | SUM. E INST. DE TABLERO DE CONTROL DE BOMBAS 220 VAC-3Ø-60Hz | 2d | 2026-02-17 | 2026-02-19 | 518 | 1d |  | 1,862.68 | 05.01.07.04 | 3 días |
| 520 | 1.6.1.1.8 | **POZO DE TIERRA** | 1d | 2025-12-31 | 2026-01-01 |  | 50d |  | 2,548.81 | 05.01.08 | 2 días |
| 521 | 1.6.1.1.8.1 | SUM. E INST. DE POZO TIERRA DE BAJA TENSION SEGUN DISEÑO | 1d | 2025-12-31 | 2026-01-01 | 503 | 50d |  | 2,548.81 | 05.01.08.01 | 2 días |
| 522 | 1.6.1.1.9 | **ELECTROBOMBA** | 3d | 2026-01-27 | 2026-01-30 |  | 21d |  | 3,077.78 | 05.01.09 | 4 días |
| 523 | 1.6.1.1.9.1 | ELECTROBOMBAS DE EJE VERTICAL pot=2HP, ADT=18.00m | 3d | 2026-01-27 | 2026-01-30 | 225 | 21d |  | 3,077.78 | 05.01.09.01 | 4 días |
| 524 | 1.6.1.1.10 | **ARTEFACTOS** | 4d | 2026-02-11 | 2026-02-15 |  | 4d |  | 6,428.44 | 05.01.10 | 5 días |
| 525 | 1.6.1.1.10.1 | SUM. E INST. DE LUCES DE EMERGENCIA TIPO LED, AUTONOMIA DE 4h | 1d | 2026-02-11 | 2026-02-12 | 239 | 4d | 0d | 217.56 | 05.01.10.01 | 2 días |
| 526 | 1.6.1.1.10.2 | SUM. E INST. DE AIRE ACONDICIONADO | 2d | 2026-02-12 | 2026-02-14 | 525 | 4d | 0d | 5,714.68 | 05.01.10.02 | 3 días |
| 527 | 1.6.1.1.10.3 | SUM. E INST. DE SENSORES CONTRA INCENDIO | 1d | 2026-02-14 | 2026-02-15 | 526 | 4d | 0d | 496.2 | 05.01.10.03 | 2 días |
| 528 | 1.6.1.1.11 | **PRUEBA ELECTRICA** | 1d | 2026-02-15 | 2026-02-16 |  | 4d |  | 2,231.67 | 05.01.11 | 2 días |
| 529 | 1.6.1.1.11.1 | PRUEBA ELECTRICASS CONTINUIDAD, BAJA TENSION, MEGADO, MEDICION DE RESISTENCIA DE POZO A TIERRA, INFORME CON PROTOCOLOS DE PRUEBAS DE AISLAMIENTO Y RESISTENCIA DE POZO A TIERRA, PRUEBA DE CARGA. | 1d | 2026-02-15 | 2026-02-16 | 527 | 4d |  | 2,231.67 | 05.01.11.01 | 2 días |
| 530 | 1.6.1.2 | **VELATORIO** | 48d | 2025-11-10 | 2025-12-28 |  | 54d |  | 7,467.54 | 05.02 | 49 días |
| 531 | 1.6.1.2.1 | **SALIDAS PARA ALUMBRADO, TOMACORRIENTES, FUERZA Y SEÑALES DÉBILES** | 48d | 2025-11-10 | 2025-12-28 |  | 54d |  | 4,896.44 | 05.02.01 | 49 días |
| 532 | 1.6.1.2.1.1 | **SALIDAS** | 48d | 2025-11-10 | 2025-12-28 |  | 54d |  | 2,261.11 | 05.02.01.01 | 49 días |
| 533 | 1.6.1.2.1.1.1 | SALIDA PARA ALUMBRADO EN TECHO | 1d | 2025-11-10 | 2025-11-11 | 131SS | 97d | 0d | 524.88 | 05.02.01.01.01 | 2 días |
| 534 | 1.6.1.2.1.1.2 | SALIDA PARA ALUMBRADO EN PARED | 1d | 2025-11-11 | 2025-11-12 | 533 | 97d | 0d | 262.44 | 05.02.01.01.02 | 2 días |
| 535 | 1.6.1.2.1.1.3 | SALIDA PARA ALUMBRADO DE EMERGENCIA EN PARED | 1d | 2025-11-12 | 2025-11-13 | 534 | 97d | 0d | 174.96 | 05.02.01.01.03 | 2 días |
| 536 | 1.6.1.2.1.1.4 | TAPA CIEGA PARA LUMINARIA | 3d | 2025-12-19 | 2025-12-22 | 323 | 54d | 0d | 12.24 | 05.02.01.01.04 | 4 días |
| 537 | 1.6.1.2.1.1.5 | SALIDA PARA INTERRUPTOR | 1d | 2025-11-13 | 2025-11-14 | 535 | 97d | 0d | 162.58 | 05.02.01.01.05 | 2 días |
| 538 | 1.6.1.2.1.1.6 | INTERRUPTOR | 2d | 2025-12-22 | 2025-12-24 | 536 | 54d | 0d | 288.19 | 05.02.01.01.06 | 3 días |
| 539 | 1.6.1.2.1.1.7 | SALIDA PARA TOMACORRIENTE DE INTERIOR | 1d | 2025-11-14 | 2025-11-15 | 537 | 97d |  | 386.96 | 05.02.01.01.07 | 2 días |
| 540 | 1.6.1.2.1.1.8 | TOMACORRIENTES DE INTERIOR | 2d | 2025-12-24 | 2025-12-26 | 538 | 54d | 0d | 389.34 | 05.02.01.01.08 | 3 días |
| 541 | 1.6.1.2.1.1.9 | TOMACORRIENTES DE EXTERIOR | 2d | 2025-12-24 | 2025-12-26 | 540SS | 54d | 0d | 55.62 | 05.02.01.01.09 | 3 días |
| 542 | 1.6.1.2.1.1.10 | TAPA CIEGA PARA TOMACORRIENTES EN PARED | 2d | 2025-12-26 | 2025-12-28 | 541 | 54d |  | 3.9 | 05.02.01.01.10 | 3 días |

| ID | WBS | Task | Type | Duration | Start | Finish | Predecessors | Total slack | Free slack | Cost | Text1 | Text2 |
| --- | --- | --- | --- | --- | --- | --- | --- | --- | --- | --- | --- | --- |
| 543 | 1.6.1.2.1.2 | **CANALIZACIONES, CONDUCTOS Y TUBERIAS** |  | 1d | 2025-11-10 | 2025-11-11 |  | 83d |  | 682.8 | 05.02.01.02 | 2 días |
| 544 | 1.6.1.2.1.2.1 | TUBERIA PVC-P, D=25MM |  | 1d | 2025-11-10 | 2025-11-11 | 131SS | 83d | 0d | 682.8 | 05.02.01.02.01 | 2 días |
| 545 | 1.6.1.2.1.3 | **CONDUCTORES Y CABLES DE ENERGIA EN TUBERIAS** |  | 7d | 2025-11-20 | 2025-11-27 |  | 83d |  | 1,881.15 | 05.02.01.03 | 8 días |
| 546 | 1.6.1.2.1.3.1 | CABLE DE ENERGIA |  | 7d | 2025-11-20 | 2025-11-27 | 544FS+9d | 83d | 0d | 1,881.15 | 05.02.01.03.01 | 8 días |
| 547 | 1.6.1.2.1.4 | **SISTEMA DE CONDUCTOS** |  | 1d | 2025-11-27 | 2025-11-28 |  | 83d |  | 49.3 | 05.02.01.04 | 2 días |
| 548 | 1.6.1.2.1.4.1 | SISTEMA DE CONDUCTOS HACIA LOS PUNTOS ELECTRICOS |  | 1d | 2025-11-27 | 2025-11-28 | 546 | 83d | 0d | 49.3 | 05.02.01.04.01 | 2 días |
| 549 | 1.6.1.2.1.5 | **TABLEROS ELECTRICOS** |  | 1d | 2025-11-28 | 2025-11-29 |  | 83d |  | 22.08 | 05.02.01.05 | 2 días |
| 550 | 1.6.1.2.1.5.1 | MANTENIMIENTO Y LIMPIEZA DE TABLERO ELECTRICO |  | 1d | 2025-11-28 | 2025-11-29 | 548 | 83d |  | 22.08 | 05.02.01.05.01 | 2 días |
| 551 | 1.6.1.2.2 | **ARTEFACTOS** |  | 6d | 2025-12-19 | 2025-12-25 |  | 57d |  | 2,571.1 | 05.02.02 | 7 días |
| 552 | 1.6.1.2.2.1 | LUMINARIA TIPO 1 |  | 1d | 2025-12-19 | 2025-12-20 | 323 | 57d | 0d | 1,441.1 | 05.02.02.01 | 2 días |
| 553 | 1.6.1.2.2.2 | LUMINARIA TIPO 2 |  | 4d | 2025-12-20 | 2025-12-24 | 552 | 57d | 0d | 515.24 | 05.02.02.02 | 5 días |
| 554 | 1.6.1.2.2.3 | LUMINARIA TIPO 3 |  | 1d | 2025-12-24 | 2025-12-25 | 553 | 57d |  | 614.76 | 05.02.02.03 | 2 días |
| 555 | 1.7 | Termino de Obra | milestone | 0d | 2026-02-20 | 2026-02-20 | 46, 529, 554, 358 | 0d |  |  |  | 0 días |
